# 项目开发二级计划

Schedule from MS Project, 2022-01-10 to 2023-09-04.
Microsoft

## Calendars

- 单休: Mon-Fri 08:00-12:00, 13:00-17:00; Sat-Sun off. Exceptions (off unless hours are given): 2022-01-01 to 2023-04-15 08:00-12:00, 13:00-17:00 (SF5项目开发计划, recurring).

## Resources

| Resource |
| --- |
| 项目管理部 |
| 研发部门（电机/电控/PACK） |
| 平台管理部 |
| 工艺开发部 |
| 试验部 |
| PACK/电驱质量部 |
| 制造工厂 |
| 质量管理部 |
| 人力资源部 |
| 财务部 |
| 商务部 |
| 配套部 |
| 供应链管理部 |
| 制造管理部 |
| 销售部 |
| 系统工程部 |
| 研发补 |
| 研发部 |
| 质量部 |
| 各专业一环 |
| 供应链疬 |
| 研发 |
| 供应链业务部 |
| 工艺开发 |
| 制造管理 |
| 制造农场 |
| 公司开发部 |
| 销售 |
| 质量 |
| 项目心里 |
| 研发部门 |
| 产品开发部 |
| 信息技术部 |
| 采购部 |
| 产品开发部门 |
| 各专业板块 |

## Schedule

| ID | WBS | Task | Duration | Start | Finish | Predecessors | Total slack | Free slack | 交付物 | 责任人 | 要求补充时间 |
| --- | --- | --- | --- | --- | --- | --- | --- | --- | --- | --- | --- |
| 1 | 1 | **G7项目策划阶段** | 28d? | 2022-01-10 | 2022-02-11 |  | 18d |  |  |  |  |
| 2 | 1.1 | **客户信息输入** | 3d | 2022-01-10 | 2022-01-13 |  | 18d | 0d |  |  |  |
| 3 | 1.1.1 | 客户需求调查表 | 3d | 2022-01-10 | 2022-01-13 |  | 18d |  | 项目建议书 | 涂慧明 | 2023/7/15 |
| 4 | 1.1.2 | 商务信息评审表 | 3d | 2022-01-10 | 2022-01-13 |  | 18d |  | 项目建议书审批流 | 涂慧明 | 2023/7/15 |
| 5 | 1.2 | **组建售前小组** | 3d | 2022-01-13 | 2022-01-17 |  | 490d |  |  |  |  |
| 6 | 1.2.1 | 售前小组成员名单 | 3d | 2022-01-13 | 2022-01-17 | 2 | 490d |  | 产品开发需求表-汇总 | 李万强 | 2023/7/15 |
| 7 | 1.3 | **阶段策划** | 1d | 2022-01-13 | 2022-01-14 |  | 492d |  |  |  |  |
| 8 | 1.3.1 | 售前项目工作计划 | 1d | 2022-01-13 | 2022-01-14 | 2 | 492d |  |  | 涂慧明 | 2023/7/15 |
| 9 | 1.4 | **客户技术要求解读** | 4d | 2022-01-13 | 2022-01-18 |  | 18d | 0d |  |  |  |
| 10 | 1.4.1 | 电池包总成SOR | 2d | 2022-01-13 | 2022-01-15 | 2 | 18d | 0d | 项目可行性分析报告 | 骆云飞 | 2023/7/15 |
| 11 | 1.4.2 | 电池包总成SOR技术澄清表 | 2d | 2022-01-15 | 2022-01-18 | 10 | 18d |  |  | 骆云飞 | 2023/7/15 |
| 12 | 1.5 | **竞品分析** | 2d | 2022-01-18 | 2022-01-20 |  | 487d |  |  |  |  |
| 13 | 1.5.1 | 竞品分析报告 | 2d | 2022-01-18 | 2022-01-20 | 9 | 487d |  |  | 骆云飞 | 2023/7/17 |
| 14 | 1.6 | **技术可行性评估** | 2d | 2022-01-18 | 2022-01-20 |  | 18d | 0d |  |  |  |
| 15 | 1.6.1 | 产品技术可行性评估报告 | 1d | 2022-01-18 | 2022-01-19 | 9 | 19d |  | 任命函 | 骆云飞 | 2023/7/17 |
| 16 | 1.6.2 | 软件开发可行性评估报告 | 2d | 2022-01-18 | 2022-01-20 | 9 | 18d |  |  | 权禹铭 | 2023/7/15 |
| 17 | 1.6.3 | 初始的法律法规标准清单 | 2d | 2022-01-18 | 2022-01-20 | 9 | 18d |  | 立项报告 | 孙婷婷 | 2023/7/15 |
| 18 | 1.7 | **概念方案设计** | 9d? | 2022-01-18 | 2022-01-28 |  | 103d | 0d |  |  |  |
| 19 | 1.7.1 | 子系统设计方案 | 1d? | 2022-01-18 | 2022-01-19 | 9 | 186d | 0d |  | DRE | 2023/7/15 |
| 20 | 1.7.2 | 电池包总成设计方案 | 3d | 2022-01-19 | 2022-01-22 | 19 | 186d | 0d |  | 骆云飞 | 2023/7/20 |
| 21 | 1.7.3 | 电池包总成设计冻结评审报告 | 2d | 2022-01-22 | 2022-01-25 | 20 | 186d | 0d | 立项报告审批流 | 骆云飞 | 2023/7/20 |
| 22 | 1.7.4 | EBOM | 3d | 2022-01-25 | 2022-01-28 | 21 | 186d |  |  | 骆云飞 | 2023/7/20 |
| 23 | 1.8 | **概念过程设计** | 3d | 2022-01-28 | 2022-02-01 |  | 451d | 5d |  |  |  |
| 24 | 1.8.1 | 初始工艺流程图 | 3d | 2022-01-28 | 2022-02-01 | 18 | 451d |  |  | 梁元伟 | 2023/7/15 |

| ID | WBS | Task | Type | Duration | Start | Finish | Predecessors | Total slack | Free slack | 责任人 | 要求补充时间 | 交付物 |
| --- | --- | --- | --- | --- | --- | --- | --- | --- | --- | --- | --- | --- |
| 25 | 1.9 | **初始成本分析** |  | 3d? | 2022-01-28 | 2022-02-01 |  | 186d | 0d |  |  |  |
| 26 | 1.9.1 | 初始成本分析报告 |  | 3d? | 2022-01-28 | 2022-02-01 | 18 | 186d |  | 范甄妮 | 2023/7/17 |  |
| 27 | 1.9.2 | 项目投资收益分析报告 |  | 3d | 2022-01-28 | 2022-02-01 | 18 | 186d |  | 范甄妮 | 2023/7/17 | 启动会会议纪要 |
| 28 | 1.10 | **商务报价更新** |  | 5d | 2022-02-01 | 2022-02-07 |  | 186d | 0d |  |  |  |
| 29 | 1.10.1 | 商务报价单 |  | 2d | 2022-02-01 | 2022-02-03 | 25 | 186d | 0d | 涂慧明 | 2023/7/17 | 各专业项目书 |
| 30 | 1.10.2 | 客户定点函 |  | 3d | 2022-02-03 | 2022-02-07 | 29 | 186d |  | 涂慧明 | 2023/7/17 |  |
| 31 | 1.11 | **项目风险识别** |  | 3d | 2022-01-28 | 2022-02-01 |  | 477d |  |  |  |  |
| 32 | 1.11.1 | 初始项目风险清单 |  | 3d | 2022-01-28 | 2022-02-01 | 18 | 477d |  | 李万强 | 2023/7/15 | 各专业三级计划 |
| 33 | 1.12 | **战略评审** |  | 3d | 2022-02-07 | 2022-02-10 |  | 186d | 0d |  |  |  |
| 34 | 1.12.1 | 立项启动决议 |  | 3d | 2022-02-07 | 2022-02-10 | 18, 25, 28 | 186d | 0d | 涂慧明 | 2023/7/17 |  |
| 35 | 1.13 | **项目阶段总结** |  | 28d? | 2022-01-10 | 2022-02-11 |  | 468d |  |  |  |  |
| 36 | 1.13.1 | 阶段总结报告 |  | 1d | 2022-02-10 | 2022-02-11 | 33 | 468d |  | 李万强 | 2023/7/17 | 产品开发需求表-各专业版块 |
| 37 | 1.13.2 | G7阀门开启 | milestone | 1d? | 2022-01-10 | 2022-01-11 |  | 495d |  |  |  |  |
| 38 | 2 | **G6立项评审阶段** |  | 44d | 2022-01-20 | 2022-03-12 |  | 18d |  |  |  |  |
| 39 | 2.1 | **组建项目团队** |  | 6d | 2022-02-10 | 2022-02-17 |  | 186d | 0d |  |  |  |
| 40 | 2.1.1 | 项目经理任命书 |  | 3d | 2022-02-10 | 2022-02-14 | 34 | 189d |  | 李万强 | 7/18 |  |
| 41 | 2.1.2 | 项目小组成员名单和职责分工表 |  | 3d | 2022-02-10 | 2022-02-14 | 34 | 186d | 0d | 李万强 | 7/18 |  |
| 42 | 2.1.3 | 项目成员能力评估表 |  | 3d | 2022-02-14 | 2022-02-17 | 41 | 186d |  | 李万强 | 7/18 |  |
| 43 | 2.2 | **阶段策划** |  | 15d | 2022-02-17 | 2022-03-07 |  | 448d |  |  |  |  |
| 44 | 2.2.1 | 项目一级开发计划 |  | 3d | 2022-02-17 | 2022-02-21 | 39 | 448d | 0d | 李万强 | 7/19 |  |
| 45 | 2.2.2 | 项目二级开发计划 |  | 7d | 2022-02-21 | 2022-03-01 | 44 | 448d | 0d | 李万强 | 7/19 |  |
| 46 | 2.2.3 | 各版块三级子计划 |  | 5d | 2022-03-01 | 2022-03-07 | 45 | 448d |  | 李万强 | 7/19 |  |
| 47 | 2.3 | **标准法规输入评估** |  | 3d | 2022-01-28 | 2022-02-01 |  | 477d |  |  |  |  |
| 48 | 2.3.1 | 合规性评估报告 |  | 3d | 2022-01-28 | 2022-02-01 | 14, 18 | 477d |  | 孙婷婷 | 7/17 |  |

| ID | WBS | Task | Duration | Start | Finish | Predecessors | Total slack | Free slack | 责任人 | 要求补充时间 |
| --- | --- | --- | --- | --- | --- | --- | --- | --- | --- | --- |
| 49 | 2.4 | **初版方案设计** | 3d | 2022-01-28 | 2022-02-01 |  | 103d | 0d |  |  |
| 50 | 2.4.1 | BMS开发方案 | 3d | 2022-01-28 | 2022-02-01 | 14, 18 | 467d |  | 权禹铭 | 7/17 |
| 51 | 2.5 | **软件需求确定** | 10d | 2022-02-01 | 2022-02-12 |  | 103d | 0d |  |  |
| 52 | 2.5.1 | 软件小组成员名单及职责分配表 | 3d | 2022-02-01 | 2022-02-04 | 49 | 474d |  | 权禹铭 | 7/17 |
| 53 | 2.5.2 | 软件设计和开发任务书 | 5d | 2022-02-01 | 2022-02-07 | 49 | 472d |  | 权禹铭 | 7/17 |
| 54 | 2.5.3 | 软件SOR（初版） | 5d | 2022-02-01 | 2022-02-07 | 49 | 467d | 0d | 权禹铭 | 7/17 |
| 55 | 2.5.4 | 软件开发方案 | 5d | 2022-02-07 | 2022-02-12 | 54 | 467d |  | 权禹铭 | 7/17 |
| 56 | 2.5.5 | 软件开发保密协议（委外） | 1d | 2022-02-07 | 2022-02-08 | 54 | 471d |  | 权禹铭 |  |
| 57 | 2.5.6 | 软件交付物节点及交付物清单（委外） | 1d | 2022-02-07 | 2022-02-08 | 54 | 471d |  | 权禹铭 |  |
| 58 | 2.5.7 | 软件开发总体计划 | 3d | 2022-02-07 | 2022-02-10 | 54 | 469d |  | 权禹铭 | 7/17 |
| 59 | 2.5.8 | 软件测试总体计划 | 3d | 2022-02-07 | 2022-02-10 | 54 | 469d |  | 权禹铭 | 7/17 |
| 60 | 2.6 | **初始过程设计记录** | 5d | 2022-02-07 | 2022-02-12 |  | 446d | 0d |  |  |
| 61 | 2.6.1 | 初始工艺性分析报告 | 5d | 2022-02-07 | 2022-02-12 | 28, 23 | 446d |  | 梁元伟 | 7/15 |
| 62 | 2.6.2 | 初始产线平面布置图 | 3d | 2022-02-07 | 2022-02-10 | 28, 23 | 448d |  | 梁元伟 | 7/15 |
| 63 | 2.6.3 | 初始关键工序清单 | 3d | 2022-02-07 | 2022-02-10 | 28, 23 | 448d |  | 梁元伟 | 7/15 |
| 64 | 2.6.4 | 初始关键工序技术方案 | 3d | 2022-02-07 | 2022-02-10 | 28, 23 | 448d |  | 梁元伟 | 7/15 |
| 65 | 2.7 | **工装设备过程资源需求分析** | 11d | 2022-02-12 | 2022-02-25 |  | 446d | 0d |  |  |
| 66 | 2.7.1 | 需求分析 | 5d | 2022-02-12 | 2022-02-18 | 60 | 446d | 0d | 梁元伟 | 7/17 |
| 67 | 2.7.2 | 新增及改造工装设备过程资源需求分析报告 | 3d | 2022-02-18 | 2022-02-22 | 66 | 449d |  | 梁元伟 | 7/17 |
| 68 | 2.7.3 | 工装设备过程资源初始需求表 | 3d | 2022-02-18 | 2022-02-22 | 66 | 446d | 0d | 梁元伟 | 7/17 |
| 69 | 2.7.4 | 工装设备过程资源预选供应商清单 | 3d | 2022-02-22 | 2022-02-25 | 68 | 446d |  | 周密 |  |
| 70 | 2.8 | **新辅料、新技术研究** | 5d | 2022-02-25 | 2022-03-03 |  | 451d |  |  |  |
| 71 | 2.8.1 | 新辅料、新技术研究需求分析清单 | 5d | 2022-02-25 | 2022-03-03 | 65 | 451d |  | 向永川 | 7/15 |
| 72 | 2.8.2 | 新辅料、新技术研究需求分析报告 | 3d | 2022-02-25 | 2022-03-01 | 65 | 453d |  | 向永川 | 7/15 |

| ID | WBS | Task | Duration | Start | Finish | Predecessors | Total slack | Free slack | 责任人 | 要求补充时间 |
| --- | --- | --- | --- | --- | --- | --- | --- | --- | --- | --- |
| 73 | 2.9 | **制造及物流成本分析** | 8d | 2022-01-28 | 2022-02-07 |  | 472d |  |  |  |
| 74 | 2.9.1 | 加工和制造成本分析报告 | 5d | 2022-01-28 | 2022-02-03 | 14, 18 | 472d | 0d | 秦飞 | 7/15 |
| 75 | 2.9.2 | 报价单 | 3d | 2022-02-03 | 2022-02-07 | 74 | 472d |  | 秦飞 | 7/15 |
| 76 | 2.10 | **供应商预选** | 3d | 2022-02-25 | 2022-03-01 |  | 446d | 0d |  |  |
| 77 | 2.10.1 | 预选供应商清单(含潜在供应商清单和关键供应商定点清单 | 3d | 2022-02-25 | 2022-03-01 | 14, 18, 65 | 446d |  | 周密 | 7/15 |
| 78 | 2.11 | **质量、成本目标签订完成** | 10d | 2022-02-17 | 2022-03-01 |  | 453d |  |  |  |
| 79 | 2.11.1 | 项目投资收益分析报告 | 5d | 2022-02-17 | 2022-02-23 | 39 | 458d |  | 范甄妮 | 7/15 |
| 80 | 2.11.2 | 应规避问题清单 | 5d | 2022-02-17 | 2022-02-23 | 39 | 458d |  | 王成林 | 7/15 |
| 81 | 2.11.3 | 项目质量目标 | 5d | 2022-02-17 | 2022-02-23 | 39 | 453d | 0d | 王成林 | 7/15 |
| 82 | 2.11.4 | 质量保障方案 | 5d | 2022-02-23 | 2022-03-01 | 81 | 453d |  | 王成林 | 7/15 |
| 83 | 2.12 | **商务定点** | 7d | 2022-03-01 | 2022-03-09 |  | 446d |  |  |  |
| 84 | 2.12.1 | 订单合同/商务定点函/价格协议/供保协议 | 7d | 2022-03-01 | 2022-03-09 | 76 | 446d |  | 周密 | 7/17 |
| 85 | 2.13 | **客户SOR及技术协议签订** | 27d | 2022-01-20 | 2022-02-21 |  | 18d | 0d |  |  |
| 86 | 2.13.1 | 电池包总成SOR | 20d | 2022-01-20 | 2022-02-12 | 14 | 18d | 0d | 骆云飞 | 7/20 |
| 87 | 2.13.2 | 电池包总成SOR技术澄清表 | 7d | 2022-02-12 | 2022-02-21 | 86 | 18d |  | 骆云飞 | 7/20 |
| 88 | 2.13.3 | 电池包总成开发技术协议 | 5d | 2022-02-12 | 2022-02-18 | 86 | 20d |  | 骆云飞 | 7/20 |
| 89 | 2.14 | **项目风险识别** | 5d | 2022-02-17 | 2022-02-23 |  | 458d |  |  |  |
| 90 | 2.14.1 | 项目风险清单 | 5d | 2022-02-17 | 2022-02-23 | 39 | 458d |  | 李万强 | 7/17 |
| 91 | 2.15 | **立项评审** | 10d | 2022-02-17 | 2022-03-01 |  | 186d | 0d |  |  |
| 92 | 2.15.1 | 项目立项报告 | 7d | 2022-02-17 | 2022-02-25 | 39 | 186d | 0d | 李万强 | 7/20 |
| 93 | 2.15.2 | 研发项目立项计划书 | 3d | 2022-02-25 | 2022-03-01 | 92 | 186d |  | 李万强 | 7/20 |
| 94 | 2.15.3 | 立项评审会议纪要 | 3d | 2022-02-25 | 2022-03-01 | 92 | 186d |  | 李万强 | 7/20 |
| 95 | 2.16 | **项目启动** | 8d | 2022-03-01 | 2022-03-10 |  | 186d | 0d |  |  |
| 96 | 2.16.1 | 项目启动会材料 | 5d | 2022-03-01 | 2022-03-07 | 91 | 186d | 0d | 李万强 | 7/20 |
| 97 | 2.16.2 | 项目启动会议纪要 | 3d | 2022-03-07 | 2022-03-10 | 96 | 186d |  | 李万强 | 7/20 |

| ID | WBS | Task | Duration | Start | Finish | Predecessors | Total slack | Free slack | 责任人 | 要求补充时间 |
| --- | --- | --- | --- | --- | --- | --- | --- | --- | --- | --- |
| 98 | 2.17 | **项目阶段总结** | 2d | 2022-03-10 | 2022-03-12 |  | 443d |  |  |  |
| 99 | 2.17.1 | 阶段总结报告 | 2d | 2022-03-10 | 2022-03-12 | 95 | 443d |  | 李万强 | 7/20 |
| 100 | 3 | **G5方案发布阶段** | 205d | 2022-02-12 | 2022-10-10 |  | 18d | 0d |  |  |
| 101 | 3.1 | **阶段策划** | 15d | 2022-03-10 | 2022-03-28 |  | 186d |  |  |  |
| 102 | 3.1.1 | 项目一级开发计划(更新) | 3d | 2022-03-10 | 2022-03-14 | 95 | 186d | 0d | 李万强 | 2023/7/20 |
| 103 | 3.1.2 | 项目二级开发计划(更新) | 7d | 2022-03-14 | 2022-03-22 | 102 | 186d | 0d | 李万强 | 2023/7/20 |
| 104 | 3.1.3 | 项目三级开发计划(更新) | 5d | 2022-03-22 | 2022-03-28 | 103 | 186d |  | 李万强 | 2023/7/20 |
| 105 | 3.1.4 | 项目小组成员名单和职责分工表 | 3d | 2022-03-10 | 2022-03-14 | 95 | 198d |  | 李万强 | 2023/7/20 |
| 106 | 3.2 | **设计要求确定** | 12d | 2022-02-21 | 2022-03-07 |  | 18d | 0d |  | 2023/7/20 |
| 107 | 3.2.1 | 电池包总成开发技术要求书STS | 7d | 2022-02-21 | 2022-03-01 | 85 | 18d | 0d | 骆云飞 | 2023/7/20 |
| 108 | 3.2.2 | 零部件CTS | 5d | 2022-03-01 | 2022-03-07 | 107 | 18d |  | DRE | 2023/7/20 |
| 109 | 3.2.3 | 电池包总成开发技术协议 | 7d | 2022-02-21 | 2022-03-01 | 85 | 23d |  | 骆云飞 | 2023/7/20 |
| 110 | 3.3 | **专利规避** | 8d | 2022-03-07 | 2022-03-16 |  | 196d |  |  | 2023/7/20 |
| 111 | 3.3.1 | 专利排查报告 | 5d | 2022-03-07 | 2022-03-12 | 106 | 196d | 0d | DRE | 2023/7/20 |
| 112 | 3.3.2 | 专利申请清单 | 3d | 2022-03-12 | 2022-03-16 | 111 | 196d |  | DRE | 2023/7/20 |
| 113 | 3.4 | **方案设计** | 30d | 2022-03-07 | 2022-04-11 | 106 | 18d | 0d |  | 2023/7/20 |
| 114 | 3.4.1 | 子系统制造可行性分析报告 | 3d | 2022-03-07 | 2022-03-10 |  | 45d |  | DRE | 2023/7/20 |
| 115 | 3.4.2 | 零部件开发计划 | 3d | 2022-03-07 | 2022-03-10 |  | 45d |  | DRE | 2023/7/20 |
| 116 | 3.4.3 | 零部件DFMEA | 5d | 2022-03-07 | 2022-03-12 |  | 43d |  | DRE | 2023/7/20 |
| 117 | 3.4.4 | 模组低压接口定义 | 3d | 2022-03-07 | 2022-03-10 |  | 45d |  | 张航/王炟 | 2023/7/20 |
| 118 | 3.4.5 | 模组NTC规格书 | 5d | 2022-03-07 | 2022-03-12 |  | 43d |  | 张航/王炟 | 2023/7/20 |
| 119 | 3.4.6 | 电池包结构仿真需求输入表 | 3d | 2022-03-07 | 2022-03-10 |  | 45d |  | 周成全 | 2023/7/20 |
| 120 | 3.4.7 | CAE仿真报告 | 7d | 2022-03-07 | 2022-03-15 |  | 41d |  | 周成全 | 2023/7/20 |
| 121 | 3.4.8 | 电池包热仿真需求输入表 | 3d | 2022-03-07 | 2022-03-10 |  | 45d |  | 付细平 | 2023/7/20 |
| 122 | 3.4.9 | CFD仿真报告 | 7d | 2022-03-07 | 2022-03-15 |  | 41d |  | 付细平 | 2023/7/20 |
| 123 | 3.4.10 | 热失控流场仿真需求输入表 | 3d | 2022-03-07 | 2022-03-10 |  | 45d |  | 付细平 | 2023/7/20 |
| 124 | 3.4.11 | 热失控流场仿真报告 | 7d | 2022-03-07 | 2022-03-15 |  | 41d |  | 付细平 | 2023/7/20 |
| 125 | 3.4.12 | 电气件选型报告 | 3d | 2022-03-07 | 2022-03-10 |  | 45d |  | 张航/王炟 | 2023/7/20 |
| 126 | 3.4.13 | BMS硬件产品功能框图 | 5d | 2022-03-07 | 2022-03-12 |  | 43d |  | 权禹铭 | 2023/7/20 |
| 127 | 3.4.14 | BMS硬件电气接口文档 | 5d | 2022-03-07 | 2022-03-12 |  | 43d |  | 权禹铭 | 2023/7/20 |
| 128 | 3.4.15 | BMS硬件产品说明书 | 5d | 2022-03-07 | 2022-03-12 |  | 43d |  | 权禹铭 | 2023/7/20 |
| 129 | 3.4.16 | BMS硬件Block功能框图 | 5d | 2022-03-07 | 2022-03-12 |  | 43d |  | 权禹铭 | 2023/7/20 |
| 130 | 3.4.17 | 电池系统电气原理图 | 5d | 2022-03-07 | 2022-03-12 |  | 43d |  | 张航/王炟 | 2023/7/20 |
| 131 | 3.4.18 | 电气件规格书 | 5d | 2022-03-07 | 2022-03-12 |  | 43d |  | 张航/王炟 | 2023/7/20 |
| 132 | 3.4.19 | 电气安全评估报告 | 5d | 2022-03-07 | 2022-03-12 |  | 43d |  | 张航/王炟 | 2023/7/20 |
| 133 | 3.4.20 | 热安全评估报告 | 5d | 2022-03-07 | 2022-03-12 |  | 43d |  | 吴泽峰 | 2023/7/20 |
| 134 | 3.4.21 | 机械安全评估报告 | 5d | 2022-03-07 | 2022-03-12 |  | 43d |  | 蒋攀 | 2023/7/20 |
| 135 | 3.4.22 | 水温传感器规格书 | 5d | 2022-03-07 | 2022-03-12 |  | 43d |  | 电池吴泽峰 | 2023/7/20 |
| 136 | 3.4.23 | 热管理策略 | 5d | 2022-03-07 | 2022-03-12 |  | 43d |  | 电池吴泽峰 | 2023/7/20 |
| 137 | 3.4.24 | 热安全预警策略 | 5d | 2022-03-07 | 2022-03-12 |  | 43d |  | 电池吴泽峰 | 2023/7/20 |
| 138 | 3.4.25 | PACK尺寸链校核报告 | 5d | 2022-03-07 | 2022-03-12 |  | 43d |  | 陈杨 | 2023/7/20 |
| 139 | 3.4.26 | 标准件选型及扭矩清单 | 5d | 2022-03-07 | 2022-03-12 |  | 43d |  | DRE | 2023/7/20 |
| 140 | 3.4.27 | 汇流排截面尺寸校核报告 | 5d | 2022-03-07 | 2022-03-12 |  | 43d |  | 陈杨 | 2023/7/20 |
| 141 | 3.4.28 | 整包密封性设计校核报告 | 5d | 2022-03-07 | 2022-03-12 |  | 43d |  | 陈杨 | 2023/7/20 |
| 142 | 3.4.29 | DMU校核报告 | 5d | 2022-03-07 | 2022-03-12 |  | 43d |  | 陈杨 | 2023/7/20 |
| 143 | 3.4.30 | 电池包总成3D数据 | 10d | 2022-03-07 | 2022-03-18 |  | 38d |  | 陈杨 | 2023/7/20 |
| 144 | 3.4.31 | 电池包总成2D图纸 | 7d | 2022-03-07 | 2022-03-15 |  | 41d |  | 陈杨 | 2023/7/20 |
| 145 | 3.4.32 | 电池包设计寿命评估报告 | 5d | 2022-03-07 | 2022-03-12 |  | 43d |  | 骆云飞 | 2023/7/20 |
| 146 | 3.4.33 | 模组膨胀力仿真报告 | 10d | 2022-03-07 | 2022-03-18 |  | 38d |  | 陈杨 | 2023/7/20 |
| 147 | 3.4.34 | 柱碰仿真结果 | 5d | 2022-03-07 | 2022-03-12 |  | 43d |  | 骆云飞 | 2023/7/20 |
| 148 | 3.4.35 | 动力经济性仿真报告 | 5d | 2022-03-07 | 2022-03-12 |  | 43d |  | 骆云飞 | 2023/7/20 |
| 149 | 3.4.36 | EBOM | 7d | 2022-03-07 | 2022-03-15 |  | 41d |  | 骆云飞 | 2023/7/20 |
| 150 | 3.4.37 | 装配技术要求书 | 5d | 2022-03-07 | 2022-03-12 |  | 43d |  | 骆云飞 | 2023/7/20 |
| 151 | 3.4.38 | 零部件设计检查表 | 5d | 2022-03-07 | 2022-03-12 |  | 43d |  | DRE | 2023/7/20 |
| 152 | 3.4.39 | 子系统设计方案 | 5d | 2022-03-07 | 2022-03-12 |  | 43d |  | DRE | 2023/7/20 |
| 153 | 3.4.40 | 零部件3D数据 | 7d | 2022-03-07 | 2022-03-15 |  | 41d |  | DRE | 2023/7/20 |
| 154 | 3.4.41 | 零部件2D图纸 | 7d | 2022-03-07 | 2022-03-15 |  | 41d |  | DRE | 2023/7/20 |
| 155 | 3.4.42 | 电池包总成设计方案 | 7d | 2022-03-07 | 2022-03-15 |  | 41d |  | 骆云飞 | 2023/7/20 |
| 156 | 3.4.43 | 电池包设计寿命评估报告 | 5d | 2022-03-07 | 2022-03-12 |  | 43d |  | 骆云飞 | 2023/7/20 |
| 157 | 3.4.44 | 零部件开发进度管控表 | 30d | 2022-03-07 | 2022-04-11 |  | 18d |  | 骆云飞 | 2023/7/20 |
| 158 | 3.4.45 | 电芯参数表 | 5d | 2022-03-07 | 2022-03-12 |  | 43d |  | 魏廷亮 | 2023/7/20 |
| 159 | 3.4.46 | 电芯EOL下线检测技术要求 | 5d | 2022-03-07 | 2022-03-12 |  | 43d |  | 魏廷亮 | 2023/7/20 |
| 160 | 3.4.47 | 电芯规格书 | 5d | 2022-03-07 | 2022-03-12 |  | 43d |  | 魏廷亮 | 2023/7/20 |
| 161 | 3.4.48 | 电芯强检报告 | 30d | 2022-03-07 | 2022-04-11 |  | 18d |  | 魏廷亮 | 2023/7/20 |
| 162 | 3.4.49 | BMS软件开发数据表 | 7d | 2022-03-07 | 2022-03-15 |  | 41d |  | 骆云飞 | 2023/7/20 |
| 163 | 3.4.50 | 电池包总成DFMEA | 15d | 2022-03-07 | 2022-03-24 |  | 33d |  | 骆云飞 | 2023/7/20 |
| 164 | 3.4.51 | 电池包总成特殊特性清单 | 5d | 2022-03-07 | 2022-03-12 |  | 43d |  | 骆云飞 | 2023/7/20 |
| 165 | 3.4.52 | 零部件特殊特性清单 | 5d | 2022-03-07 | 2022-03-12 |  | 43d |  | DRE | 2023/7/20 |
| 166 | 3.4.53 | Pack EOL下线检测技术条件 | 7d | 2022-03-07 | 2022-03-15 |  | 41d |  | 骆云飞 | 2023/7/20 |

| ID | WBS | Task | Duration | Start | Finish | Predecessors | Total slack | Free slack | 要求补充时间 | 责任人 |
| --- | --- | --- | --- | --- | --- | --- | --- | --- | --- | --- |
| 167 | 3.5 | **可制造性分析** | 5d | 2022-04-11 | 2022-04-16 | 113 | 18d | 0d | 2023/7/20 |  |
| 168 | 3.5.1 | 可制造性分析报告 | 5d | 2022-04-11 | 2022-04-16 |  | 18d |  | 2023/7/20 | 梁元伟 |
| 169 | 3.5.2 | SE分析清单 | 3d | 2022-04-11 | 2022-04-14 |  | 20d |  | 2023/7/20 | 梁元伟 |
| 170 | 3.6 | **设计冻结发布** | 5d | 2022-04-16 | 2022-04-22 | 113, 167 | 18d | 0d | 2023/7/20 |  |
| 171 | 3.6.1 | 子系统设计冻结评审报告 | 5d | 2022-04-16 | 2022-04-22 |  | 18d |  | 2023/7/20 | DRE |
| 172 | 3.6.2 | 电池包总成设计冻结评审报告 | 3d | 2022-04-16 | 2022-04-20 |  | 20d |  | 2023/7/20 | 骆云飞 |
| 173 | 3.6.3 | 供应商定点需求函 | 3d | 2022-04-16 | 2022-04-20 |  | 20d |  | 2023/7/20 | DRE+周密 |
| 174 | 3.7 | **A样软件初版发布** | 45d | 2022-02-12 | 2022-04-06 | 51 | 103d | 0d | 2023/7/20 |  |
| 175 | 3.7.1 | A样软件DFMEA（基础版） | 45d | 2022-02-12 | 2022-04-06 |  | 103d |  | 2023/7/20 | 权禹铭 |
| 176 | 3.7.2 | A样软件需求规格书 | 45d | 2022-02-12 | 2022-04-06 |  | 103d |  | 2023/7/20 | 权禹铭 |
| 177 | 3.7.3 | A样软件系统接口规范 | 45d | 2022-02-12 | 2022-04-06 |  | 103d |  | 2023/7/20 | 权禹铭 |
| 178 | 3.7.4 | A样软件需求分析报告 | 45d | 2022-02-12 | 2022-04-06 |  | 103d |  | 2023/7/20 | 权禹铭 |
| 179 | 3.7.5 | A样软件需求验证准则 | 45d | 2022-02-12 | 2022-04-06 |  | 103d |  | 2023/7/20 | 权禹铭 |
| 180 | 3.7.6 | A样软件需求追溯表 | 45d | 2022-02-12 | 2022-04-06 |  | 103d |  | 2023/7/20 | 权禹铭 |
| 181 | 3.7.7 | A样软件架构设计说明书 | 45d | 2022-02-12 | 2022-04-06 |  | 103d |  | 2023/7/20 | 权禹铭 |
| 182 | 3.7.8 | A样软件接口列表 | 45d | 2022-02-12 | 2022-04-06 |  | 103d |  | 2023/7/20 | 权禹铭 |
| 183 | 3.7.9 | A样软件架构追溯表 | 45d | 2022-02-12 | 2022-04-06 |  | 103d |  | 2023/7/20 | 权禹铭 |
| 184 | 3.7.10 | A样软件详细设计说明书 | 45d | 2022-02-12 | 2022-04-06 |  | 103d |  | 2023/7/20 | 权禹铭 |
| 185 | 3.7.11 | A样软件单元测试用例 | 45d | 2022-02-12 | 2022-04-06 |  | 103d |  | 2023/7/20 | 权禹铭 |
| 186 | 3.7.12 | A样软件单元测试缺陷问题跟踪记录表 | 45d | 2022-02-12 | 2022-04-06 |  | 103d |  | 2023/7/20 | 权禹铭 |
| 187 | 3.7.13 | A样软件单元测试报告 | 45d | 2022-02-12 | 2022-04-06 |  | 103d |  | 2023/7/20 | 权禹铭 |
| 188 | 3.7.14 | A样集成软件 | 45d | 2022-02-12 | 2022-04-06 |  | 103d |  | 2023/7/20 | 权禹铭 |
| 189 | 3.7.15 | A样集成软件测试用例 | 45d | 2022-02-12 | 2022-04-06 |  | 103d |  | 2023/7/20 | 权禹铭 |
| 190 | 3.7.16 | A样软件集成测试报告 | 45d | 2022-02-12 | 2022-04-06 |  | 103d |  | 2023/7/20 | 权禹铭 |
| 191 | 3.7.17 | A样软件系统测试用例 | 45d | 2022-02-12 | 2022-04-06 |  | 103d |  | 2023/7/20 | 权禹铭 |
| 192 | 3.7.18 | A样软件系统测试缺陷问题跟踪记录表 | 45d | 2022-02-12 | 2022-04-06 |  | 103d |  | 2023/7/20 | 权禹铭 |
| 193 | 3.7.19 | A样软件系统测试报告 | 45d | 2022-02-12 | 2022-04-06 |  | 103d |  | 2023/7/20 | 权禹铭 |
| 194 | 3.7.20 | A样软件系统测试追溯表 | 45d | 2022-02-12 | 2022-04-06 |  | 103d |  | 2023/7/20 | 权禹铭 |
| 195 | 3.7.21 | A样初版发布软件 | 45d | 2022-02-12 | 2022-04-06 |  | 103d |  | 2023/7/20 | 权禹铭 |
| 196 | 3.7.22 | A样软件需求澄清沟通记录表（委外） | 45d | 2022-02-12 | 2022-04-06 |  | 103d |  | 2023/7/20 | 权禹铭 |
| 197 | 3.7.23 | A样软件开发审视问题表（委外） | 45d | 2022-02-12 | 2022-04-06 |  | 103d |  | 2023/7/20 | 权禹铭 |
| 198 | 3.7.24 | A样软件版本记录表 | 45d | 2022-02-12 | 2022-04-06 |  | 103d |  | 2023/7/20 | 权禹铭 |
| 199 | 3.7.25 | A样软件约定其他交付物（委外） | 45d | 2022-02-12 | 2022-04-06 |  | 103d |  | 2023/7/20 | 权禹铭 |

| ID | WBS | Task | Type | Duration | Start | Finish | Predecessors | Total slack | Free slack | 要求补充时间 | 责任人 |
| --- | --- | --- | --- | --- | --- | --- | --- | --- | --- | --- | --- |
| 200 | 3.8 | **手工样件工艺策划** |  | 10d | 2022-04-22 | 2022-05-04 | 170 | 99d | 0d | 2023/7/20 |  |
| 201 | 3.8.1 | 工装设备过程资源需求表 |  | 3d | 2022-04-22 | 2022-04-26 |  | 106d |  | 2023/7/20 | 梁元伟 |
| 202 | 3.8.2 | 新设备及工检夹模技术指标 |  | 5d | 2022-04-22 | 2022-04-28 |  | 104d |  | 2023/7/20 | 梁元伟 |
| 203 | 3.8.3 | 过程特殊特性清单 |  | 5d | 2022-04-22 | 2022-04-28 |  | 104d |  | 2023/7/20 | 梁元伟 |
| 204 | 3.8.4 | 初始流程图 |  | 5d | 2022-04-22 | 2022-04-28 |  | 104d |  | 2023/7/20 | 梁元伟 |
| 205 | 3.8.5 | MBOM |  | 5d | 2022-04-22 | 2022-04-28 |  | 104d |  | 2023/7/20 | 梁元伟 |
| 206 | 3.8.6 | 样件CP |  | 5d | 2022-04-22 | 2022-04-28 |  | 104d |  | 2023/7/20 | 梁元伟 |
| 207 | 3.8.7 | 生产线平面布置图 |  | 5d | 2022-04-22 | 2022-04-28 |  | 104d |  | 2023/7/20 | 梁元伟 |
| 208 | 3.8.8 | 防错方案 |  | 5d | 2022-04-22 | 2022-04-28 |  | 104d |  | 2023/7/20 | 向永川 |
| 209 | 3.8.9 | 可追溯性报告 |  | 7d | 2022-04-22 | 2022-04-30 |  | 102d |  | 2023/7/20 | 向永川 |
| 210 | 3.8.10 | 人员培训记录表 |  | 10d | 2022-04-22 | 2022-05-04 |  | 99d |  | 2023/7/20 | 杨智 |
| 211 | 3.8.11 | 上岗资质认证表 |  | 10d | 2022-04-22 | 2022-05-04 |  | 99d |  | 2023/7/20 | 杨智 |
| 212 | 3.9 | **试制线工装设备过程资源及产能提升策划** |  | 7d | 2022-05-04 | 2022-05-12 | 200 | 99d | 0d | 2023/7/20 |  |
| 213 | 3.9.1 | 产线建设可行性报告 | inactive | 5d | 2022-05-04 | 2022-05-10 |  | 101d |  | 2023/7/20 | 毛方东 |
| 214 | 3.9.2 | 初始节拍分析报告 |  | 5d | 2022-05-04 | 2022-05-10 |  | 101d |  | 2023/7/20 | 毛方东 |
| 215 | 3.9.3 | 工装设备开发SOR |  | 7d | 2022-05-04 | 2022-05-12 |  | 99d |  | 2023/7/20 | 毛方东 |
| 216 | 3.9.4 | 产线建设立项报告 |  | 5d | 2022-05-04 | 2022-05-10 |  | 101d |  | 2023/7/20 |  |
| 217 | 3.10 | **试制线工装设备过程资源采购及验收** |  | 33d | 2022-05-12 | 2022-06-20 | 212 | 99d | 0d | 2023/7/20 |  |
| 218 | 3.10.1 | 设备采购申请单(NCC流程) |  | 3d | 2022-05-12 | 2022-05-16 |  | 129d |  | 2023/7/20 | 毛方东 |
| 219 | 3.10.2 | 产线设备工装导入及调试计划 |  | 3d | 2022-05-12 | 2022-05-16 |  | 129d |  | 2023/7/20 | 毛方东 |
| 220 | 3.10.3 | 推荐供应商 |  | 7d | 2022-05-12 | 2022-05-20 |  | 115d | 0d | 2023/7/20 | 周密 |
| 221 | 3.10.4 | 设备选型报告 |  | 15d | 2022-05-12 | 2022-05-30 |  | 117d |  | 2023/7/20 | 毛方东 |
| 222 | 3.10.5 | 商务报价 |  | 7d | 2022-05-20 | 2022-05-28 | 220 | 115d | 0d | 2023/7/20 | 周密 |
| 223 | 3.10.6 | 定点通知 |  | 3d | 2022-05-28 | 2022-06-01 | 222 | 115d |  | 2023/7/20 | 周密 |
| 224 | 3.10.7 | 工装设备进度计划跟踪表 |  | 30d | 2022-05-12 | 2022-06-16 |  | 99d | 0d | 2023/7/20 | 周密 毛方东 |
| 225 | 3.10.8 | 调机物料清单（设备） |  | 10d | 2022-05-12 | 2022-05-24 |  | 122d |  | 2023/7/20 | 设备开发 |
| 226 | 3.10.9 | 工装设备预验收报告 |  | 3d | 2022-06-16 | 2022-06-20 | 224 | 99d |  | 2023/7/20 | 设备开发 |
| 227 | 3.10.10 | 设备预验收报告（如有） |  | 3d | 2022-06-16 | 2022-06-20 | 224 | 99d |  | 2023/7/20 |  |

| ID | WBS | Task | Duration | Start | Finish | Predecessors | Total slack | Free slack | 要求补充时间 | 责任人 |
| --- | --- | --- | --- | --- | --- | --- | --- | --- | --- | --- |
| 228 | 3.11 | **工艺验证** | 15d | 2022-06-20 | 2022-07-07 | 217 | 99d |  | 2023/7/20 |  |
| 229 | 3.11.1 | 工艺验证清单 | 3d | 2022-06-20 | 2022-06-23 |  | 111d |  | 2023/7/20 | 向永川 |
| 230 | 3.11.2 | 工艺验证物料清单 | 3d | 2022-06-20 | 2022-06-23 |  | 111d |  | 2023/7/20 | 向永川 |
| 231 | 3.11.3 | 工艺验证物料请购单 | 3d | 2022-06-20 | 2022-06-23 |  | 111d |  | 2023/7/20 | 梁元伟 |
| 232 | 3.11.4 | 工艺参数验证及验证报告 | 15d | 2022-06-20 | 2022-07-07 |  | 99d |  | 2023/7/20 | 向永川 |
| 233 | 3.11.5 | 测试规程 | 10d | 2022-06-20 | 2022-07-01 |  | 104d |  | 2023/7/20 | 梁元伟 |
| 234 | 3.12 | **质量检验准备** | 15d | 2022-04-22 | 2022-05-10 | 170 | 149d |  | 2023/7/20 |  |
| 235 | 3.12.1 | 零部件检验控制计划 | 10d | 2022-04-22 | 2022-05-04 |  | 154d |  | 2023/7/20 | 聂广 |
| 236 | 3.12.2 | 零部件检验基准书 | 15d | 2022-04-22 | 2022-05-10 |  | 149d |  | 2023/7/20 | 聂广 |
| 237 | 3.12.3 | 成品检验作业指导书 | 15d | 2022-04-22 | 2022-05-10 |  | 149d |  | 2023/7/20 | 王成林 |
| 238 | 3.13 | **CV实验策划及工装准备** | 55d | 2022-04-22 | 2022-06-25 | 170 | 109d |  | 2023/7/20 |  |
| 239 | 3.13.1 | 电池包总成概念验证计划CVP | 10d | 2022-04-22 | 2022-05-04 |  | 154d |  | 2023/7/20 | 张俊召 骆云飞 |
| 240 | 3.13.2 | 零部件概念验证计划CVP | 10d | 2022-04-22 | 2022-05-04 |  | 154d |  | 2023/7/20 | DRE |
| 241 | 3.13.3 | 试验物料清单 | 15d | 2022-04-22 | 2022-05-10 |  | 149d |  | 2023/7/20 | 张俊召 |
| 242 | 3.13.4 | 试验案例策划 | 15d | 2022-04-22 | 2022-05-10 |  | 149d |  | 2023/7/20 | 张俊召 |
| 243 | 3.13.5 | 委外试验清单 | 10d | 2022-04-22 | 2022-05-04 |  | 154d |  | 2023/7/20 | 张俊召 |
| 244 | 3.13.6 | 试验工装清单 | 10d | 2022-04-22 | 2022-05-04 |  | 154d |  | 2023/7/20 | 张俊召 |
| 245 | 3.13.7 | 试验工装设计图纸 | 10d | 2022-04-22 | 2022-05-04 |  | 109d | 0d | 2023/7/20 | 陈杨 张航/王炟 |
| 246 | 3.13.8 | 试验工装CAE分析报告 | 10d | 2022-05-04 | 2022-05-16 | 245 | 109d | 0d | 2023/7/20 | 仿真工程师 |
| 247 | 3.13.9 | 试验工装评审报告 | 5d | 2022-05-16 | 2022-05-21 | 246 | 109d | 0d | 2023/7/20 | 陈杨 张航/王炟 |
| 248 | 3.13.10 | 试验工装验收报告 | 30d | 2022-05-21 | 2022-06-25 | 247 | 109d |  | 2023/7/20 | 陈杨 张航/王炟 |
| 249 | 3.14 | **样包生产计划** | 3d | 2022-04-22 | 2022-04-26 | 170 | 161d |  | 2023/7/20 |  |
| 250 | 3.14.1 | 样包生产执行计划 | 3d | 2022-04-22 | 2022-04-26 |  | 161d |  | 2023/7/20 | 李万强 |
| 251 | 3.14.2 | 研发物料请示报告 | 3d | 2022-04-22 | 2022-04-26 |  | 161d |  | 2023/7/20 | DRE |

| ID | WBS | Task | Duration | Start | Finish | Predecessors | Total slack | Free slack | 要求补充时间 | 责任人 |
| --- | --- | --- | --- | --- | --- | --- | --- | --- | --- | --- |
| 252 | 3.15 | **供应商准入** | 20d | 2022-04-22 | 2022-05-16 | 170 | 18d | 0d | 2023/7/20 |  |
| 253 | 3.15.1 | 供应商调查表 | 7d | 2022-04-22 | 2022-04-30 |  | 31d |  | 2023/7/20 | 周密 |
| 254 | 3.15.2 | 供应商准入审核计划 | 4d | 2022-04-22 | 2022-04-27 |  | 34d |  | 2023/7/20 | 周密 |
| 255 | 3.15.3 | 供应商准入审核报告 | 10d | 2022-04-22 | 2022-05-04 |  | 18d | 0d | 2023/7/20 | 周密 |
| 256 | 3.15.4 | 合格供应商清单 | 5d | 2022-05-04 | 2022-05-10 | 255 | 18d | 0d | 2023/7/20 | 周密 |
| 257 | 3.15.5 | 质量协议（本体供应商） | 5d | 2022-05-10 | 2022-05-16 | 256 | 18d |  | 2023/7/20 | 叶亚宝 |
| 258 | 3.16 | **供应商技术对接** | 10d | 2022-05-16 | 2022-05-27 | 252 | 18d | 0d | 2023/7/20 |  |
| 259 | 3.16.1 | 零部件PDT清单 | 7d | 2022-05-16 | 2022-05-24 |  | 21d |  | 2023/7/20 | DRE |
| 260 | 3.16.2 | 供应商保密协议 | 7d | 2022-05-16 | 2022-05-24 |  | 21d |  | 2023/7/20 | DRE |
| 261 | 3.16.3 | 零部件开发技术要求书SOR | 7d | 2022-05-16 | 2022-05-24 |  | 21d |  | 2023/7/20 | DRE |
| 262 | 3.16.4 | 零部件SOR技术澄清表 | 7d | 2022-05-16 | 2022-05-24 |  | 21d |  | 2023/7/20 | DRE |
| 263 | 3.16.5 | 供应商技术评估报告 | 7d | 2022-05-16 | 2022-05-24 |  | 21d |  | 2023/7/20 | DRE |
| 264 | 3.16.6 | 推荐供应商 | 7d | 2022-05-16 | 2022-05-24 |  | 21d |  | 2023/7/20 | 周密 |
| 265 | 3.16.7 | 供应商询价表 | 7d | 2022-05-16 | 2022-05-24 |  | 21d |  | 2023/7/20 | 周密 |
| 266 | 3.16.8 | 供应商质量控制方案分析报告 | 7d | 2022-05-16 | 2022-05-24 |  | 21d |  | 2023/7/20 | 叶亚宝 |
| 267 | 3.16.9 | 零部件定点函 | 7d | 2022-05-16 | 2022-05-24 |  | 21d |  | 2023/7/20 | 周密 |
| 268 | 3.16.10 | 商务协议（本体供应商） | 10d | 2022-05-16 | 2022-05-27 |  | 18d |  | 2023/7/20 | 周密 |
| 269 | 3.16.11 | 供应商技术协议 | 10d | 2022-05-16 | 2022-05-27 |  | 18d |  | 2023/7/20 | DRE |
| 270 | 3.16.12 | 定点供应商清单 | 7d | 2022-05-16 | 2022-05-24 |  | 21d |  | 2023/7/20 | 周密 |
| 271 | 3.16.13 | 软件开发定点需求函（委外） | 1d | 2022-05-16 | 2022-05-17 |  | 27d |  | 2023/7/20 | 权禹铭 |
| 272 | 3.16.14 | 软件SOR（签字盖章版）（委外） | 1d | 2022-05-16 | 2022-05-17 |  | 27d |  | 2023/7/20 | 权禹铭 |
| 273 | 3.16.15 | 软件SOR技术偏离表（委外） | 1d | 2022-05-16 | 2022-05-17 |  | 27d |  | 2023/7/20 | 权禹铭 |
| 274 | 3.17 | **手工样件采购** | 35d | 2022-05-27 | 2022-07-07 | 258 | 18d | 0d | 2023/7/20 |  |
| 275 | 3.17.1 | 供应商启动会议纪要 | 3d | 2022-05-27 | 2022-05-31 |  | 50d |  | 2023/7/20 | 周密 |
| 276 | 3.17.2 | 零部件APQP计划 | 5d | 2022-05-27 | 2022-06-02 |  | 48d |  | 2023/7/20 | 叶亚宝 |
| 277 | 3.17.3 | 样件试制订单 | 3d | 2022-05-27 | 2022-05-31 |  | 50d |  | 2023/7/20 | 周密 |
| 278 | 3.17.4 | 零部件问题清单 | 15d | 2022-05-27 | 2022-06-14 |  | 38d |  | 2023/7/20 | DRE |
| 279 | 3.17.5 | 零部件到货计划 | 5d | 2022-05-27 | 2022-06-02 |  | 48d |  | 2023/7/20 | 周密 |
| 280 | 3.17.6 | 零部件来料检验问题清单 | 30d | 2022-05-27 | 2022-07-01 |  | 23d |  | 2023/7/20 | 聂广 |
| 281 | 3.17.7 | 外购件厂家出货检验基准书 | 35d | 2022-05-27 | 2022-07-07 |  | 18d |  | 2023/7/20 | 叶亚宝 |
| 282 | 3.17.8 | 外购件厂家出货检验报告 | 35d | 2022-05-27 | 2022-07-07 |  | 18d |  | 2023/7/20 | 叶亚宝 |

| ID | WBS | Task | Duration | Start | Finish | Predecessors | Total slack | Free slack | 要求补充时间 | 责任人 |
| --- | --- | --- | --- | --- | --- | --- | --- | --- | --- | --- |
| 283 | 3.18 | **物流方案策划** | 15d | 2022-05-16 | 2022-06-02 | 170, 252 | 129d |  | 2023/7/20 |  |
| 284 | 3.18.1 | 零部件包装技术要求 | 15d | 2022-05-16 | 2022-06-02 |  | 129d |  | 2023/7/20 | 秦飞 |
| 285 | 3.18.2 | 总成包装方案 | 15d | 2022-05-16 | 2022-06-02 |  | 129d |  | 2023/7/20 | 秦飞 |
| 286 | 3.18.3 | 仓储方案和货架规划方案 | 15d | 2022-05-16 | 2022-06-02 |  | 129d |  | 2023/7/20 | 秦飞 |
| 287 | 3.18.4 | 初版厂内物流方案 | 15d | 2022-05-16 | 2022-06-02 |  | 129d |  | 2023/7/20 | 秦飞 |
| 288 | 3.18.5 | 初版厂外物流方案 | 15d | 2022-05-16 | 2022-06-02 |  | 129d |  | 2023/7/20 | 秦飞 |
| 289 | 3.19 | **生产准备会** | 5d | 2022-07-07 | 2022-07-13 | 274 | 18d | 0d | 2023/7/20 |  |
| 290 | 3.19.1 | 产前沟通会议记录及工艺验证检查表 | 5d | 2022-07-07 | 2022-07-13 |  | 18d |  | 2023/7/20 | 梁元伟 |
| 291 | 3.20 | **样件生产及跟线** | 7d | 2022-07-13 | 2022-07-21 | 289 | 18d | 0d | 2023/7/20 |  |
| 292 | 3.20.1 | 排产计划 | 3d | 2022-07-13 | 2022-07-16 |  | 22d |  | 2023/7/20 | 罗永江 |
| 293 | 3.20.2 | 过程数据记录表 | 5d | 2022-07-13 | 2022-07-19 |  | 20d |  | 2023/7/20 | 向永川 |
| 294 | 3.20.3 | 测试记录表 | 5d | 2022-07-13 | 2022-07-19 |  | 20d |  | 2023/7/20 | 向永川 |
| 295 | 3.20.4 | 首样件评审表 | 5d | 2022-07-13 | 2022-07-19 |  | 20d |  | 2023/7/20 | 梁元伟 |
| 296 | 3.20.5 | 试制总结报告 | 5d | 2022-07-13 | 2022-07-19 |  | 20d |  | 2023/7/20 | 梁元伟 |
| 297 | 3.20.6 | 样件检验记录 | 5d | 2022-07-13 | 2022-07-19 |  | 20d |  | 2023/7/20 | 柳波 |
| 298 | 3.20.7 | 静态扭矩记录表 | 5d | 2022-07-13 | 2022-07-19 |  | 20d |  | 2023/7/20 | 杨智 |
| 299 | 3.20.8 | 样件交付记录 | 5d | 2022-07-13 | 2022-07-19 |  | 20d |  | 2023/7/20 | 杨智 |
| 300 | 3.20.9 | 试制问题清单 | 7d | 2022-07-13 | 2022-07-21 |  | 18d |  | 2023/7/20 | 王成林 |
| 301 | 3.21 | **CV设计验证** | 50d | 2022-07-21 | 2022-09-17 | 291 | 18d | 0d | 2023/7/20 |  |
| 302 | 3.21.1 | 电池包总成概念验证报告CVR | 45d | 2022-07-21 | 2022-09-12 |  | 23d |  | 2023/7/20 | 张俊召 |
| 303 | 3.21.2 | 零部件概念验证报告CVR | 40d | 2022-07-21 | 2022-09-06 |  | 28d |  | 2023/7/20 | DRE |
| 304 | 3.21.3 | 设计验证问题记录 | 50d | 2022-07-21 | 2022-09-17 |  | 18d |  | 2023/7/20 | 张俊召 |
| 305 | 3.21.4 | 试验总结报告 | 50d | 2022-07-21 | 2022-09-17 |  | 18d |  | 2023/7/20 | 张俊召 |
| 306 | 3.22 | **安全可靠性评估** | 5d | 2022-09-17 | 2022-09-23 | 170, 301 | 32d |  | 2023/7/20 |  |
| 307 | 3.22.1 | 电芯安全可靠性评估报告 | 5d | 2022-09-17 | 2022-09-23 |  | 32d |  | 2023/7/20 | 魏廷亮 |
| 308 | 3.22.2 | 制造安全性评估表 | 5d | 2022-09-17 | 2022-09-23 |  | 32d |  | 2023/7/20 | EHS工程师 |

| ID | WBS | Task | Duration | Start | Finish | Predecessors | Total slack | Free slack | 要求补充时间 | 责任人 |
| --- | --- | --- | --- | --- | --- | --- | --- | --- | --- | --- |
| 309 | 3.23 | **A样软件冻结发布** | 75d | 2022-04-06 | 2022-07-02 | 174 | 103d |  | 2023/7/20 |  |
| 310 | 3.23.1 | A样软件整车测试用例（如需） | 75d | 2022-04-06 | 2022-07-02 |  | 103d |  | 2023/7/20 | 权禹铭 |
| 311 | 3.23.2 | A样软件整车测试报告（如需） | 75d | 2022-04-06 | 2022-07-02 |  | 103d |  | 2023/7/20 | 权禹铭 |
| 312 | 3.23.3 | A样软件整车测试缺陷问题跟踪记录表 | 75d | 2022-04-06 | 2022-07-02 |  | 103d |  | 2023/7/20 | 权禹铭 |
| 313 | 3.23.4 | A样软件成熟度评审记录表 | 75d | 2022-04-06 | 2022-07-02 |  | 103d |  | 2023/7/20 | 权禹铭 |
| 314 | 3.23.5 | A样软件问题清单 | 75d | 2022-04-06 | 2022-07-02 |  | 103d |  | 2023/7/20 | 权禹铭 |
| 315 | 3.23.6 | A样软件释放审批表 | 75d | 2022-04-06 | 2022-07-02 |  | 103d |  | 2023/7/20 | 权禹铭 |
| 316 | 3.23.7 | A样软件冻结版 | 75d | 2022-04-06 | 2022-07-02 |  | 103d |  | 2023/7/20 | 权禹铭 |
| 317 | 3.23.8 | A样软件版本记录表 | 60d | 2022-04-06 | 2022-06-15 |  | 118d |  | 2023/7/20 | 权禹铭 |
| 318 | 3.24 | **供应商PPAP策划** | 5d | 2022-05-16 | 2022-05-21 | 252 | 139d |  | 2023/7/20 |  |
| 319 | 3.24.1 | 零部件PPAP监控等级清单 | 5d | 2022-05-16 | 2022-05-21 |  | 139d |  | 2023/7/20 | 叶亚宝 |
| 320 | 3.25 | **项目成本第一次核算** | 5d | 2022-09-17 | 2022-09-23 | 301 | 20d | 2d | 2023/7/20 |  |
| 321 | 3.25.1 | 本阶段投资收益分析报告 | 5d | 2022-09-17 | 2022-09-23 |  | 20d |  | 2023/7/20 | 范甄妮 |
| 322 | 3.26 | **确定各阶段质量目标及质量追踪** | 5d | 2022-09-17 | 2022-09-23 | 301 | 20d | 2d | 2023/7/20 |  |
| 323 | 3.26.1 | 本阶段质量目标确认表 | 5d | 2022-09-17 | 2022-09-23 |  | 20d |  | 2023/7/20 | 王成林 |
| 324 | 3.26.2 | 应规避问题检查表 | 5d | 2022-09-17 | 2022-09-23 |  | 20d |  | 2023/7/20 | 王成林 |
| 325 | 3.26.3 | 质量问题清单 | 5d | 2022-09-17 | 2022-09-23 |  | 20d |  | 2023/7/20 | 王成林 |
| 326 | 3.27 | **项目变更管理** | 7d | 2022-09-17 | 2022-09-26 | 301 | 18d | 0d | 2023/7/20 |  |
| 327 | 3.27.1 | 项目变更清单 | 7d | 2022-09-17 | 2022-09-26 |  | 18d |  | 2023/7/20 | 李万强 |
| 328 | 3.28 | **项目风险识别** | 7d | 2022-09-17 | 2022-09-26 | 301 | 18d | 0d | 2023/7/20 |  |
| 329 | 3.28.1 | 项目风险清单 | 7d | 2022-09-17 | 2022-09-26 |  | 18d |  | 2023/7/20 | 李万强 |
| 330 | 3.29 | **项目阀门评审** | 7d | 2022-09-26 | 2022-10-04 | 320, 322, 326, 328 | 18d | 0d | 2023/7/20 |  |
| 331 | 3.29.1 | 质量阀评审报告 | 7d | 2022-09-26 | 2022-10-04 |  | 18d |  | 2023/7/20 | 李万强 |
| 332 | 3.30 | **项目阶段绩效评价** | 5d | 2022-10-04 | 2022-10-10 | 330 | 18d |  | 2023/7/20 |  |
| 333 | 3.30.1 | 项目整体阶段性评价表 | 5d | 2022-10-04 | 2022-10-10 |  | 18d |  | 2023/7/20 | 李万强 |

| ID | WBS | Task | Duration | Start | Finish | Predecessors | Total slack | Free slack | 要求补充时间 | 责任人 |
| --- | --- | --- | --- | --- | --- | --- | --- | --- | --- | --- |
| 334 | 4 | **G4设计冻结阶段** | 382d | 2022-01-10 | 2023-03-31 |  | 99d | 0d |  |  |
| 335 | 4.1 | **阶段策划** | 13d | 2022-10-10 | 2022-10-25 | 100 | 234d |  | 2023/7/23 |  |
| 336 | 4.1.1 | 项目一级开发计划(更新) | 3d | 2022-10-10 | 2022-10-13 |  | 234d | 0d | 2023/7/23 | 李万强 |
| 337 | 4.1.2 | 项目二级开发计划(更新) | 5d | 2022-10-13 | 2022-10-19 | 336 | 234d | 0d | 2023/7/23 | 李万强 |
| 338 | 4.1.3 | 项目三级开发计划(更新) | 5d | 2022-10-19 | 2022-10-25 | 337 | 234d |  | 2023/7/23 | 各版块代表 |
| 339 | 4.1.4 | 项目小组成员名单和职责分工表 | 3d | 2022-10-10 | 2022-10-13 |  | 244d |  | 2023/7/23 | 李万强 |
| 340 | 4.2 | **设计要求确定** | 5d | 2022-10-10 | 2022-10-15 | 100 | 18d | 0d | 2023/7/23 |  |
| 341 | 4.2.1 | 电池包总成开发技术要求书STS | 3d | 2022-10-10 | 2022-10-13 |  | 20d |  | 2023/7/23 | 骆云飞 |
| 342 | 4.2.2 | 零部件CTS | 5d | 2022-10-10 | 2022-10-15 |  | 18d |  | 2023/7/23 | DRE |
| 343 | 4.2.3 | 电池包总成开发技术协议 | 5d | 2022-10-10 | 2022-10-15 |  | 18d |  | 2023/7/23 | 骆云飞 |
| 344 | 4.3 | **方案设计** | 7d | 2022-10-15 | 2022-10-24 | 340 | 18d | 0d | 2023/7/23 |  |
| 345 | 4.3.1 | 子系统制造可行性分析报告 | 7d | 2022-10-15 | 2022-10-24 |  | 18d |  | 2023/7/23 | DRE |
| 346 | 4.3.2 | 零部件开发计划 | 7d | 2022-10-15 | 2022-10-24 |  | 18d |  | 2023/7/23 | DRE |
| 347 | 4.3.3 | 零部件DFMEA | 7d | 2022-10-15 | 2022-10-24 |  | 18d |  | 2023/7/23 | DRE |
| 348 | 4.3.4 | 模组低压接口定义 | 7d | 2022-10-15 | 2022-10-24 |  | 18d |  | 2023/7/23 | 张航/王炟 |
| 349 | 4.3.5 | 模组NTC规格书 | 7d | 2022-10-15 | 2022-10-24 |  | 18d |  | 2023/7/23 | 张航/王炟 |
| 350 | 4.3.6 | 电池包结构仿真需求输入表 | 7d | 2022-10-15 | 2022-10-24 |  | 18d |  | 2023/7/23 | 周成全 |
| 351 | 4.3.7 | CAE仿真报告 | 7d | 2022-10-15 | 2022-10-24 |  | 18d |  | 2023/7/23 | 周成全 |
| 352 | 4.3.8 | 电池包热仿真需求输入表 | 7d | 2022-10-15 | 2022-10-24 |  | 18d |  | 2023/7/23 | 付细平 |
| 353 | 4.3.9 | CFD仿真报告 | 7d | 2022-10-15 | 2022-10-24 |  | 18d |  | 2023/7/23 | 付细平 |
| 354 | 4.3.10 | 热失控流场仿真需求输入表 | 7d | 2022-10-15 | 2022-10-24 |  | 18d |  | 2023/7/23 | 付细平 |
| 355 | 4.3.11 | 热失控流场仿真报告 | 7d | 2022-10-15 | 2022-10-24 |  | 18d |  | 2023/7/23 | 付细平 |
| 356 | 4.3.12 | 电气件选型报告 | 7d | 2022-10-15 | 2022-10-24 |  | 18d |  | 2023/7/23 | 张航/王炟 |
| 357 | 4.3.13 | BMS硬件产品功能框图 | 7d | 2022-10-15 | 2022-10-24 |  | 18d |  | 2023/7/23 | 权禹铭 |
| 358 | 4.3.14 | BMS硬件电气接口文档 | 7d | 2022-10-15 | 2022-10-24 |  | 18d |  | 2023/7/23 | 权禹铭 |
| 359 | 4.3.15 | BMS硬件产品说明书 | 7d | 2022-10-15 | 2022-10-24 |  | 18d |  | 2023/7/23 | 权禹铭 |
| 360 | 4.3.16 | BMS硬件Block功能框图 | 7d | 2022-10-15 | 2022-10-24 |  | 18d |  | 2023/7/23 | 权禹铭 |
| 361 | 4.3.17 | 电池系统电气原理图 | 7d | 2022-10-15 | 2022-10-24 |  | 18d |  | 2023/7/23 | 张航/王炟 |
| 362 | 4.3.18 | 电气件规格书 | 7d | 2022-10-15 | 2022-10-24 |  | 18d |  | 2023/7/23 | 张航/王炟 |
| 363 | 4.3.19 | 电气安全评估报告 | 7d | 2022-10-15 | 2022-10-24 |  | 18d |  | 2023/7/23 | 张航/王炟 |
| 364 | 4.3.20 | 热安全评估报告 | 7d | 2022-10-15 | 2022-10-24 |  | 18d |  | 2023/7/23 | 吴泽峰 |
| 365 | 4.3.21 | 机械安全评估报告 | 7d | 2022-10-15 | 2022-10-24 |  | 18d |  | 2023/7/23 | 陈杨 |
| 366 | 4.3.22 | 水温传感器规格书 | 7d | 2022-10-15 | 2022-10-24 |  | 18d |  | 2023/7/23 | 吴泽峰 |
| 367 | 4.3.23 | 热管理策略 | 7d | 2022-10-15 | 2022-10-24 |  | 18d |  | 2023/7/23 | 吴泽峰 |
| 368 | 4.3.24 | 热安全预警策略 | 7d | 2022-10-15 | 2022-10-24 |  | 18d |  | 2023/7/23 | 吴泽峰 |
| 369 | 4.3.25 | PACK尺寸链校核报告 | 7d | 2022-10-15 | 2022-10-24 |  | 18d |  | 2023/7/23 | 陈杨 |
| 370 | 4.3.26 | 标准件选型及扭矩清单 | 7d | 2022-10-15 | 2022-10-24 |  | 18d |  | 2023/7/23 | DRE |
| 371 | 4.3.27 | 汇流排截面尺寸校核报告 | 7d | 2022-10-15 | 2022-10-24 |  | 18d |  | 2023/7/23 | 陈杨 |
| 372 | 4.3.28 | 整包密封性设计校核报告 | 7d | 2022-10-15 | 2022-10-24 |  | 18d |  | 2023/7/23 | 陈杨 |
| 373 | 4.3.29 | DMU校核报告 | 7d | 2022-10-15 | 2022-10-24 |  | 18d |  | 2023/7/23 | 陈杨 |
| 374 | 4.3.30 | 电池包总成3D数据 | 7d | 2022-10-15 | 2022-10-24 |  | 18d |  | 2023/7/23 | 陈杨 |
| 375 | 4.3.31 | 电池包总成2D图纸 | 7d | 2022-10-15 | 2022-10-24 |  | 18d |  | 2023/7/23 | 陈杨 |
| 376 | 4.3.32 | 电池包设计寿命评估报告 | 7d | 2022-10-15 | 2022-10-24 |  | 18d |  | 2023/7/23 | 骆云飞 |
| 377 | 4.3.33 | 模组膨胀力仿真报告 | 7d | 2022-10-15 | 2022-10-24 |  | 18d |  | 2023/7/23 | 陈杨 |
| 378 | 4.3.34 | 柱碰仿真结果 | 7d | 2022-10-15 | 2022-10-24 |  | 18d |  | 2023/7/23 | 骆云飞 |
| 379 | 4.3.35 | 动力经济性仿真报告 | 7d | 2022-10-15 | 2022-10-24 |  | 18d |  | 2023/7/23 | 骆云飞 |
| 380 | 4.3.36 | EBOM | 7d | 2022-10-15 | 2022-10-24 |  | 18d |  | 2023/7/23 | 骆云飞 |
| 381 | 4.3.37 | 装配技术要求书 | 7d | 2022-10-15 | 2022-10-24 |  | 18d |  | 2023/7/23 | 骆云飞 |
| 382 | 4.3.38 | 零部件设计检查表 | 7d | 2022-10-15 | 2022-10-24 |  | 18d |  | 2023/7/23 | DRE |
| 383 | 4.3.39 | 子系统设计方案 | 7d | 2022-10-15 | 2022-10-24 |  | 18d |  | 2023/7/23 | DRE |
| 384 | 4.3.40 | 零部件3D数据 | 7d | 2022-10-15 | 2022-10-24 |  | 18d |  | 2023/7/23 | DRE |
| 385 | 4.3.41 | 零部件2D图纸 | 7d | 2022-10-15 | 2022-10-24 |  | 18d |  | 2023/7/23 | DRE |
| 386 | 4.3.42 | 电池包总成设计方案 | 7d | 2022-10-15 | 2022-10-24 |  | 18d |  | 2023/7/23 | 骆云飞 |
| 387 | 4.3.43 | 电池包设计寿命评估报告 | 7d | 2022-10-15 | 2022-10-24 |  | 18d |  | 2023/7/23 | 骆云飞 |
| 388 | 4.3.44 | pack材料、半成品、成品储存条件及期限表 | 7d | 2022-10-15 | 2022-10-24 |  | 18d |  | 2023/7/23 | 骆云飞 |
| 389 | 4.3.45 | 零部件开发进度管控表 | 7d | 2022-10-15 | 2022-10-24 |  | 18d |  | 2023/7/23 | 骆云飞 |
| 390 | 4.3.46 | 电芯参数表 | 7d | 2022-10-15 | 2022-10-24 |  | 18d |  | 2023/7/23 | 魏廷亮 |
| 391 | 4.3.47 | 电芯EOL下线检测技术要求 | 7d | 2022-10-15 | 2022-10-24 |  | 18d |  | 2023/7/23 | 魏廷亮 |
| 392 | 4.3.48 | 电芯规格书 | 7d | 2022-10-15 | 2022-10-24 |  | 18d |  | 2023/7/23 | 魏廷亮 |
| 393 | 4.3.49 | BMS软件开发数据表 | 7d | 2022-10-15 | 2022-10-24 |  | 18d |  | 2023/7/23 | 骆云飞 |
| 394 | 4.3.50 | 电芯强检报告 | 7d | 2022-10-15 | 2022-10-24 |  | 18d |  | 2023/7/23 | 魏廷亮 |
| 395 | 4.3.51 | 国标强检参数表 | 7d | 2022-10-15 | 2022-10-24 |  | 18d |  | 2023/7/23 | 骆云飞 |
| 396 | 4.3.52 | 出口认证参数表（出口项目） | 7d | 2022-10-15 | 2022-10-24 |  | 18d |  | 2023/7/23 | 骆云飞 |
| 397 | 4.3.53 | UN38.8认证参数表（如需要） | 7d | 2022-10-15 | 2022-10-24 |  | 18d |  | 2023/7/23 | 骆云飞 |
| 398 | 4.3.54 | 电池包总成DFMEA | 7d | 2022-10-15 | 2022-10-24 |  | 18d |  | 2023/7/23 | 骆云飞 |
| 399 | 4.3.55 | 电池包总成特殊特性清单 | 7d | 2022-10-15 | 2022-10-24 |  | 18d |  | 2023/7/23 | 骆云飞 |
| 400 | 4.3.56 | 零部件特殊特性清单 | 7d | 2022-10-15 | 2022-10-24 |  | 18d |  | 2023/7/23 | DRE |
| 401 | 4.3.57 | Pack EOL下线检测技术条件 | 7d | 2022-10-15 | 2022-10-24 |  | 18d |  | 2023/7/23 | 骆云飞 |

| ID | WBS | Task | Duration | Start | Finish | Predecessors | Total slack | Free slack | 要求补充时间 | 责任人 |
| --- | --- | --- | --- | --- | --- | --- | --- | --- | --- | --- |
| 402 | 4.4 | **可制造性分析** | 3d | 2022-10-24 | 2022-10-27 | 344 | 18d | 0d | 2023/7/23 |  |
| 403 | 4.4.1 | 可制造性分析报告 | 3d | 2022-10-24 | 2022-10-27 |  | 18d |  | 2023/7/23 | 梁元伟 |
| 404 | 4.4.2 | SE分析清单 | 3d | 2022-10-24 | 2022-10-27 |  | 18d |  | 2023/7/23 | 梁元伟 |
| 405 | 4.5 | **B样设计冻结发布** | 5d | 2022-10-27 | 2022-11-02 | 344, 402 | 18d | 0d | 2023/7/23 |  |
| 406 | 4.5.1 | 子系统设计冻结评审报告 | 3d | 2022-10-27 | 2022-10-31 |  | 20d |  | 2023/7/23 | DRE |
| 407 | 4.5.2 | 电池包总成设计冻结评审报告 | 5d | 2022-10-27 | 2022-11-02 |  | 18d |  | 2023/7/23 | 骆云飞 |
| 408 | 4.5.3 | 供应商定点需求函 | 1d | 2022-10-27 | 2022-10-28 |  | 22d |  | 2023/7/23 | DRE+周密 |
| 409 | 4.6 | **B样软件初版发布** | 30d | 2022-10-10 | 2022-11-14 | 100 | 167d | 0d | 2023/7/23 |  |
| 410 | 4.6.1 | B样软件DFMEA（更新） | 30d | 2022-10-10 | 2022-11-14 |  | 167d |  | 2023/7/23 | 权禹铭 |
| 411 | 4.6.2 | B样软件需求规格书 | 30d | 2022-10-10 | 2022-11-14 |  | 167d |  | 2023/7/23 | 权禹铭 |
| 412 | 4.6.3 | B样软件系统接口规范 | 30d | 2022-10-10 | 2022-11-14 |  | 167d |  | 2023/7/23 | 权禹铭 |
| 413 | 4.6.4 | B样软件需求分析报告 | 30d | 2022-10-10 | 2022-11-14 |  | 167d |  | 2023/7/23 | 权禹铭 |
| 414 | 4.6.5 | B样软件需求验证准则 | 30d | 2022-10-10 | 2022-11-14 |  | 167d |  | 2023/7/23 | 权禹铭 |
| 415 | 4.6.6 | B样软件需求追溯表 | 30d | 2022-10-10 | 2022-11-14 |  | 167d |  | 2023/7/23 | 权禹铭 |
| 416 | 4.6.7 | B样软件架构设计说明书 | 30d | 2022-10-10 | 2022-11-14 |  | 167d |  | 2023/7/23 | 权禹铭 |
| 417 | 4.6.8 | B样软件接口列表 | 30d | 2022-10-10 | 2022-11-14 |  | 167d |  | 2023/7/23 | 权禹铭 |
| 418 | 4.6.9 | B样软件架构追溯表 | 30d | 2022-10-10 | 2022-11-14 |  | 167d |  | 2023/7/23 | 权禹铭 |
| 419 | 4.6.10 | B样软件详细设计说明书 | 30d | 2022-10-10 | 2022-11-14 |  | 167d |  | 2023/7/23 | 权禹铭 |
| 420 | 4.6.11 | B样软件单元测试用例 | 30d | 2022-10-10 | 2022-11-14 |  | 167d |  | 2023/7/23 | 权禹铭 |
| 421 | 4.6.12 | B样软件单元测试缺陷问题跟踪记录表 | 30d | 2022-10-10 | 2022-11-14 |  | 167d |  | 2023/7/23 | 权禹铭 |
| 422 | 4.6.13 | B样软件单元测试报告 | 30d | 2022-10-10 | 2022-11-14 |  | 167d |  | 2023/7/23 | 权禹铭 |
| 423 | 4.6.14 | B样集成软件 | 30d | 2022-10-10 | 2022-11-14 |  | 167d |  | 2023/7/23 | 权禹铭 |
| 424 | 4.6.15 | B样集成软件测试用例 | 30d | 2022-10-10 | 2022-11-14 |  | 167d |  | 2023/7/23 | 权禹铭 |
| 425 | 4.6.16 | B样软件集成测试报告 | 30d | 2022-10-10 | 2022-11-14 |  | 167d |  | 2023/7/23 | 权禹铭 |
| 426 | 4.6.17 | B样软件系统测试用例 | 30d | 2022-10-10 | 2022-11-14 |  | 167d |  | 2023/7/23 | 权禹铭 |
| 427 | 4.6.18 | B样软件系统测试缺陷问题跟踪记录表 | 30d | 2022-10-10 | 2022-11-14 |  | 167d |  | 2023/7/23 | 权禹铭 |
| 428 | 4.6.19 | B样软件系统测试报告 | 30d | 2022-10-10 | 2022-11-14 |  | 167d |  | 2023/7/23 | 权禹铭 |
| 429 | 4.6.20 | B样软件系统测试追溯表 | 30d | 2022-10-10 | 2022-11-14 |  | 167d |  | 2023/7/23 | 权禹铭 |
| 430 | 4.6.21 | B样初版发布软件 | 30d | 2022-10-10 | 2022-11-14 |  | 167d |  | 2023/7/23 | 权禹铭 |
| 431 | 4.6.22 | B样软件需求澄清沟通记录（委外） | 30d | 2022-10-10 | 2022-11-14 |  | 167d |  | 2023/7/23 | 权禹铭 |
| 432 | 4.6.23 | B样软件开发审视问题表（委外） | 30d | 2022-10-10 | 2022-11-14 |  | 167d |  | 2023/7/23 | 权禹铭 |
| 433 | 4.6.24 | B样软件版本记录表 | 30d | 2022-10-10 | 2022-11-14 |  | 167d |  | 2023/7/23 | 权禹铭 |
| 434 | 4.6.25 | B样软件约定其他交付物（委外） | 30d | 2022-10-10 | 2022-11-14 |  | 167d |  | 2023/7/23 | 权禹铭 |

| ID | WBS | Task | Duration | Start | Finish | Predecessors | Total slack | Free slack | 要求补充时间 | 责任人 |
| --- | --- | --- | --- | --- | --- | --- | --- | --- | --- | --- |
| 435 | 4.7 | **手工样件工艺策划** | 5d | 2022-10-24 | 2022-10-29 | 344 | 225d | 0d | 2023/7/23 |  |
| 436 | 4.7.1 | 设备、工检夹模清单 | 5d | 2022-10-24 | 2022-10-29 |  | 225d |  | 2023/7/23 | 梁元伟 |
| 437 | 4.7.2 | 过程特殊特性清单 | 5d | 2022-10-24 | 2022-10-29 |  | 225d |  | 2023/7/23 | 梁元伟 |
| 438 | 4.7.3 | 过程流程图 | 5d | 2022-10-24 | 2022-10-29 |  | 225d |  | 2023/7/23 | 梁元伟 |
| 439 | 4.7.4 | MBOM | 5d | 2022-10-24 | 2022-10-29 |  | 225d |  | 2023/7/23 | 梁元伟 |
| 440 | 4.7.5 | PFMEA | 5d | 2022-10-24 | 2022-10-29 |  | 225d |  | 2023/7/23 | 梁元伟 |
| 441 | 4.7.6 | 样件CP | 5d | 2022-10-24 | 2022-10-29 |  | 225d |  | 2023/7/23 | 梁元伟 |
| 442 | 4.7.7 | 作业指导书 | 5d | 2022-10-24 | 2022-10-29 |  | 225d |  | 2023/7/23 | 梁元伟 |
| 443 | 4.7.8 | 生产线平面布置图 | 5d | 2022-10-24 | 2022-10-29 |  | 225d |  | 2023/7/23 | 梁元伟 |
| 444 | 4.7.9 | 防错方案 | 5d | 2022-10-24 | 2022-10-29 |  | 225d |  | 2023/7/23 | 向永川 |
| 445 | 4.7.10 | 过程追溯清单确认表 | 5d | 2022-10-24 | 2022-10-29 |  | 225d |  | 2023/7/23 | 向永川 |
| 446 | 4.8 | **试制员工培训** | 5d | 2022-10-29 | 2022-11-04 | 435 | 225d |  | 2023/7/23 |  |
| 447 | 4.8.1 | 人员培训记录表 | 5d | 2022-10-29 | 2022-11-04 |  | 225d |  | 2023/7/23 | 杨智 |
| 448 | 4.8.2 | 人员技能矩阵表 | 5d | 2022-10-29 | 2022-11-04 |  | 225d |  | 2023/7/23 | 杨智 |
| 449 | 4.9 | **量产线工装设备过程资源及产能提升策划** | 5d | 2022-10-27 | 2022-11-02 | 344, 402 | 200d | 0d | 2023/7/23 |  |
| 450 | 4.9.1 | 产线建设可行性报告 | 5d | 2022-10-27 | 2022-11-02 |  | 200d |  | 2023/7/23 | 毛方东 |
| 451 | 4.9.2 | 节拍分析报告 | 5d | 2022-10-27 | 2022-11-02 |  | 200d |  | 2023/7/23 | 毛方东 |
| 452 | 4.9.3 | 工装设备开发SOR | 5d | 2022-10-27 | 2022-11-02 |  | 200d |  | 2023/7/23 | 毛方东 |
| 453 | 4.9.4 | 产线建设立项报告 | 5d | 2022-10-27 | 2022-11-02 |  | 200d |  | 2023/7/23 | 毛方东 |
| 454 | 4.10 | **量产线工装设备过程资源采购及验收** | 7d | 2022-11-02 | 2022-11-10 | 449 | 200d | 0d | 2023/7/23 |  |
| 455 | 4.10.1 | 设备采购申请单(NCC流程) | 5d | 2022-11-02 | 2022-11-08 |  | 202d |  | 2023/7/23 | 毛方东 |
| 456 | 4.10.2 | 产线设备工装导入及调试计划 | 5d | 2022-11-02 | 2022-11-08 |  | 202d |  | 2023/7/23 | 毛方东 |
| 457 | 4.10.3 | 推荐供应商 | 5d | 2022-11-02 | 2022-11-08 |  | 202d |  | 2023/7/23 | 毛方东 |
| 458 | 4.10.4 | 设备选型报告 | 5d | 2022-11-02 | 2022-11-08 |  | 202d |  | 2023/7/23 | 毛方东 |
| 459 | 4.10.5 | 技术方案评审纪要 | 5d | 2022-11-02 | 2022-11-08 |  | 202d |  | 2023/7/23 | 毛方东 |
| 460 | 4.10.6 | 供应商清单 | 5d | 2022-11-02 | 2022-11-08 |  | 202d |  | 2023/7/23 | 毛方东 |
| 461 | 4.10.7 | 技术协议 | 7d | 2022-11-02 | 2022-11-10 |  | 200d |  | 2023/7/23 | 毛方东 |
| 462 | 4.10.8 | 商务报价 | 7d | 2022-11-02 | 2022-11-10 |  | 200d |  | 2023/7/23 | 周密 |
| 463 | 4.10.9 | 定点通知 | 5d | 2022-11-02 | 2022-11-08 |  | 202d |  | 2023/7/23 | 周密 |
| 464 | 4.10.10 | 商务合同 | 5d | 2022-11-02 | 2022-11-08 |  | 202d |  | 2023/7/23 | 周密 |
| 465 | 4.10.11 | 细节评审纪要 | 5d | 2022-11-02 | 2022-11-08 |  | 202d |  | 2023/7/23 | 毛方东 |
| 466 | 4.10.12 | 会签版图纸 | 5d | 2022-11-02 | 2022-11-08 |  | 202d |  | 2023/7/23 | 毛方东 |
| 467 | 4.10.13 | 工装设备进度计划跟踪表 | 5d | 2022-11-02 | 2022-11-08 |  | 202d |  | 2023/7/23 | 周密 毛方东 |
| 468 | 4.10.14 | 调机物料清单（设备） | 5d | 2022-11-02 | 2022-11-08 |  | 202d |  | 2023/7/23 | 毛方东 |

| ID | WBS | Task | Duration | Start | Finish | Predecessors | Total slack | Free slack | 要求补充时间 | 责任人 |
| --- | --- | --- | --- | --- | --- | --- | --- | --- | --- | --- |
| 469 | 4.11 | **工艺验证** | 15d | 2022-11-10 | 2022-11-28 | 454 | 205d |  | 2023/7/23 |  |
| 470 | 4.11.1 | 工艺验证清单 | 3d | 2022-11-10 | 2022-11-14 |  | 227d |  | 2023/7/23 | 向永川 |
| 471 | 4.11.2 | 工艺验证物料清单 | 3d | 2022-11-10 | 2022-11-14 |  | 227d |  | 2023/7/23 | 向永川 |
| 472 | 4.11.3 | 工艺验证物料采购单 | 3d | 2022-11-10 | 2022-11-14 |  | 227d |  | 2023/7/23 | 梁元伟 |
| 473 | 4.11.4 | 工艺参数验证及验证报告 | 15d | 2022-11-10 | 2022-11-28 |  | 215d |  | 2023/7/23 | 向永川 |
| 474 | 4.11.5 | 测试规程 | 1d | 2022-11-10 | 2022-11-11 |  | 229d |  | 2023/7/23 | 梁元伟 |
| 475 | 4.12 | **质量检验准备** | 5d | 2022-10-24 | 2022-10-29 | 344 | 225d | 0d | 2023/7/23 |  |
| 476 | 4.12.1 | 零部件检验控制计划 | 5d | 2022-10-24 | 2022-10-29 |  | 235d |  | 2023/7/23 | 聂广 |
| 477 | 4.12.2 | 零部件检验基准书 | 5d | 2022-10-24 | 2022-10-29 |  | 235d |  | 2023/7/23 | 聂广 |
| 478 | 4.12.3 | 成品检验作业指导书 | 5d | 2022-10-24 | 2022-10-29 |  | 235d |  | 2023/7/23 | 王成林 |
| 479 | 4.13 | **DV实验及物料准备** | 5d | 2022-10-24 | 2022-10-29 | 344 | 230d |  | 2023/7/23 |  |
| 480 | 4.13.1 | 电池包总成设计验证计划DVP | 5d | 2022-10-24 | 2022-10-29 |  | 230d |  | 2023/7/23 | 张俊召 骆云飞 |
| 481 | 4.13.2 | 试验物料清单 | 5d | 2022-10-24 | 2022-10-29 |  | 230d |  | 2023/7/23 | 张俊召 |
| 482 | 4.13.3 | 试验案例策划 | 5d | 2022-10-24 | 2022-10-29 |  | 230d |  | 2023/7/23 | 张俊召 |
| 483 | 4.13.4 | 委外试验清单 | 5d | 2022-10-24 | 2022-10-29 |  | 230d |  | 2023/7/23 | 张俊召 |
| 484 | 4.13.5 | 试验工装清单 | 5d | 2022-10-24 | 2022-10-29 |  | 230d |  | 2023/7/23 | 张俊召 |
| 485 | 4.13.6 | 试验工装设计图纸 | 5d | 2022-10-24 | 2022-10-29 |  | 230d |  | 2023/7/23 | 陈杨 张航/王炟 |
| 486 | 4.13.7 | 试验工装CAE分析报告 | 5d | 2022-10-24 | 2022-10-29 |  | 230d |  | 2023/7/23 | 周成全 |
| 487 | 4.13.8 | 试验工装评审报告 | 5d | 2022-10-24 | 2022-10-29 |  | 230d |  | 2023/7/23 | 陈杨 张航/王炟 |
| 488 | 4.13.9 | 试验工装验收报告 | 5d | 2022-10-24 | 2022-10-29 |  | 230d |  | 2023/7/23 | 陈杨 张航/王炟 |
| 489 | 4.14 | **样包生产计划** | 3d | 2022-01-10 | 2022-01-13 |  | 478d |  | 2023/7/23 |  |
| 490 | 4.14.1 | 样包生产执行计划 | 3d | 2022-01-10 | 2022-01-13 |  | 478d |  | 2023/7/23 | 李万强 |
| 491 | 4.14.2 | 研发物料请示报告 | 3d | 2022-01-10 | 2022-01-13 |  | 478d |  | 2023/7/23 | DRE |
| 492 | 4.15 | **新增供应商准入** | 7d | 2022-10-24 | 2022-11-01 | 344 | 56d | 0d | 2023/7/23 |  |
| 493 | 4.15.1 | 供应商调查表 | 3d | 2022-10-24 | 2022-10-27 |  | 60d |  | 2023/7/23 | 周密 |
| 494 | 4.15.2 | 供应商准入审核计划 | 3d | 2022-10-24 | 2022-10-27 |  | 60d |  | 2023/7/23 | 周密 |
| 495 | 4.15.3 | 供应商准入审核报告 | 7d | 2022-10-24 | 2022-11-01 |  | 56d |  | 2023/7/23 | 周密 |
| 496 | 4.15.4 | 合格供应商清单 | 3d | 2022-10-24 | 2022-10-27 |  | 60d |  | 2023/7/23 | 周密 |
| 497 | 4.15.5 | 质量协议（本体供应商） | 5d | 2022-10-24 | 2022-10-29 |  | 58d |  | 2023/7/23 | 叶亚宝 |

| ID | WBS | Task | Duration | Start | Finish | Predecessors | Total slack | Free slack | 要求补充时间 | 责任人 |
| --- | --- | --- | --- | --- | --- | --- | --- | --- | --- | --- |
| 498 | 4.16 | **新增供应商技术对接** | 5d | 2022-11-01 | 2022-11-07 | 492 | 56d | 0d | 2023/7/23 |  |
| 499 | 4.16.1 | 零部件PDT清单 | 5d | 2022-11-01 | 2022-11-07 |  | 56d |  | 2023/7/23 | DRE |
| 500 | 4.16.2 | 供应商保密协议 | 5d | 2022-11-01 | 2022-11-07 |  | 56d |  | 2023/7/23 | DRE |
| 501 | 4.16.3 | 分供方清单 | 5d | 2022-11-01 | 2022-11-07 |  | 56d |  | 2023/7/23 | DRE |
| 502 | 4.16.4 | 零部件开发技术要求书SOR | 5d | 2022-11-01 | 2022-11-07 |  | 56d |  | 2023/7/23 | DRE |
| 503 | 4.16.5 | 零部件SOR技术澄清表 | 5d | 2022-11-01 | 2022-11-07 |  | 56d |  | 2023/7/23 | DRE |
| 504 | 4.16.6 | 供应商技术评估报告 | 5d | 2022-11-01 | 2022-11-07 |  | 56d |  | 2023/7/23 | DRE |
| 505 | 4.16.7 | 推荐供应商 | 5d | 2022-11-01 | 2022-11-07 |  | 56d |  | 2023/7/23 | 周密 |
| 506 | 4.17 | **半工装样件采购** | 5d | 2022-11-07 | 2022-11-12 | 498, 405 | 56d | 0d | 2023/7/23 |  |
| 507 | 4.17.1 | 供应商询价表 | 5d | 2022-11-07 | 2022-11-12 |  | 56d |  | 2023/7/23 | 周密 |
| 508 | 4.17.2 | 零部件定点函 | 5d | 2022-11-07 | 2022-11-12 |  | 56d |  | 2023/7/23 | 周密 |
| 509 | 4.17.3 | 商务协议（本体供应商） | 5d | 2022-11-07 | 2022-11-12 |  | 56d |  | 2023/7/23 | 周密 |
| 510 | 4.17.4 | 零部件技术协议 | 5d | 2022-11-07 | 2022-11-12 |  | 56d |  | 2023/7/23 | DRE |
| 511 | 4.17.5 | 定点供应商清单 | 3d | 2022-11-07 | 2022-11-10 |  | 58d |  | 2023/7/23 | 周密 |
| 512 | 4.17.6 | 开模通知书 | 3d | 2022-11-07 | 2022-11-10 |  | 58d |  | 2023/7/23 | DRE |
| 513 | 4.17.7 | 供应商启动会议纪要 | 3d | 2022-11-07 | 2022-11-10 |  | 58d |  | 2023/7/23 | 周密 |
| 514 | 4.17.8 | 零部件APQP计划 | 5d | 2022-11-07 | 2022-11-12 |  | 56d |  | 2023/7/23 | 叶亚宝 |
| 515 | 4.17.9 | 样件试制订单 | 3d | 2022-11-07 | 2022-11-10 |  | 58d |  | 2023/7/23 | 周密 |
| 516 | 4.17.10 | 零部件问题清单 | 3d | 2022-11-07 | 2022-11-10 |  | 58d |  | 2023/7/23 | DRE |
| 517 | 4.17.11 | 零部件到货计划 | 3d | 2022-11-07 | 2022-11-10 |  | 58d |  | 2023/7/23 | 周密 |
| 518 | 4.18 | **来料检验** | 50d | 2022-11-02 | 2022-12-30 | 405 | 18d | 0d | 2023/7/23 |  |
| 519 | 4.18.1 | 零部件来料问题清单 | 50d | 2022-11-02 | 2022-12-30 |  | 18d |  | 2023/7/23 | 聂广 |
| 520 | 4.18.2 | 外购件厂家出货检验基准书 | 50d | 2022-11-02 | 2022-12-30 |  | 18d |  | 2023/7/23 | 叶亚宝 |
| 521 | 4.18.3 | 来料检验报告 | 50d | 2022-11-02 | 2022-12-30 |  | 18d |  | 2023/7/23 | 聂广 |
| 522 | 4.18.4 | 外购件厂家出货检验报告 | 50d | 2022-11-02 | 2022-12-30 |  | 18d |  | 2023/7/23 | 叶亚宝 |

| ID | WBS | Task | Duration | Start | Finish | Predecessors | Total slack | Free slack | 要求补充时间 | 责任人 |
| --- | --- | --- | --- | --- | --- | --- | --- | --- | --- | --- |
| 523 | 4.19 | **物料包装方案策划** | 15d | 2022-10-24 | 2022-11-10 | 344 | 220d |  | 2023/7/23 |  |
| 524 | 4.19.1 | 零部件包装方案 | 15d | 2022-10-24 | 2022-11-10 |  | 220d |  | 2023/7/23 | 秦飞 |
| 525 | 4.19.2 | 总成包装方案 | 15d | 2022-10-24 | 2022-11-10 |  | 220d |  | 2023/7/23 | 秦飞 |
| 526 | 4.20 | **设备验证** | 15d | 2022-11-10 | 2022-11-28 | 454 | 200d | 0d | 2023/7/23 |  |
| 527 | 4.20.1 | 设备、工装预验收报告 | 15d | 2022-11-10 | 2022-11-28 |  | 210d |  | 2023/7/23 | 毛方东 |
| 528 | 4.21 | **设备开箱验收及安装调试（如有）** | 5d | 2022-11-28 | 2022-12-03 | 526 | 200d |  | 2023/7/23 |  |
| 529 | 4.21.1 | 开箱验收单（预验收） | 5d | 2022-11-28 | 2022-12-03 |  | 200d |  | 2023/7/23 | 毛方东 |
| 530 | 4.21.2 | 开箱记录表 | 3d | 2022-11-28 | 2022-12-01 |  | 202d |  | 2023/7/23 | 毛方东 |
| 531 | 4.22 | **外购件量检具实物制作** | 5d | 2022-10-29 | 2022-11-04 | 475 | 225d |  | 2023/7/23 |  |
| 532 | 4.22.1 | 量检具验收报告 | 5d | 2022-10-29 | 2022-11-04 |  | 225d |  | 2023/7/23 | 聂广 |
| 533 | 4.23 | **供应商的APQP进度跟踪** | 5d | 2022-10-10 | 2022-10-15 | 100 | 242d |  | 2023/7/23 |  |
| 534 | 4.23.1 | APQP进度核查跟踪表 | 5d | 2022-10-10 | 2022-10-15 |  | 242d |  | 2023/7/23 | 叶亚宝 |
| 535 | 4.24 | **生产准备会** | 3d | 2022-11-12 | 2022-11-16 | 506 | 56d | 38d | 2023/7/23 |  |
| 536 | 4.24.1 | 产前沟通会议记录及工艺验证检查表 | 3d | 2022-11-12 | 2022-11-16 |  | 56d |  | 2023/7/23 | 梁元伟 |
| 537 | 4.25 | **样件生产及跟线** | 5d | 2022-12-30 | 2023-01-05 | 535, 518 | 18d | 0d | 2023/7/23 |  |
| 538 | 4.25.1 | 排产计划 | 3d | 2022-12-30 | 2023-01-03 |  | 20d |  | 2023/7/23 | 罗永江 |
| 539 | 4.25.2 | 过程数据记录表 | 3d | 2022-12-30 | 2023-01-03 |  | 20d |  | 2023/7/23 | 梁元伟 |
| 540 | 4.25.3 | 测试记录表 | 3d | 2022-12-30 | 2023-01-03 |  | 20d |  | 2023/7/23 | 梁元伟 |
| 541 | 4.25.4 | 首样件评审表 | 3d | 2022-12-30 | 2023-01-03 |  | 20d |  | 2023/7/23 | 梁元伟 |
| 542 | 4.25.5 | 试制总结报告 | 5d | 2022-12-30 | 2023-01-05 |  | 18d |  | 2023/7/23 | 梁元伟 |
| 543 | 4.25.6 | 样件检验记录 | 3d | 2022-12-30 | 2023-01-03 |  | 20d |  | 2023/7/23 | 柳波 |
| 544 | 4.25.7 | 静态扭矩检验记录表 | 3d | 2022-12-30 | 2023-01-03 |  | 20d |  | 2023/7/23 | 杨智 |
| 545 | 4.25.8 | 样件交付记录 | 3d | 2022-12-30 | 2023-01-03 |  | 20d |  | 2023/7/23 | 杨智 |
| 546 | 4.25.9 | 试制问题清单 | 5d | 2022-12-30 | 2023-01-05 |  | 18d |  | 2023/7/23 | 王成林 |

| ID | WBS | Task | Duration | Start | Finish | Predecessors | Total slack | Free slack | 要求补充时间 | 责任人 |
| --- | --- | --- | --- | --- | --- | --- | --- | --- | --- | --- |
| 547 | 4.26 | **DV设计验证** | 118d | 2022-11-02 | 2023-03-20 |  | 18d | 0d | 2023/7/23 |  |
| 548 | 4.26.1 | 零部件设计验证计划DVP | 1d | 2022-11-02 | 2022-11-03 | 405 | 134d | 0d | 2023/7/23 | DRE |
| 549 | 4.26.2 | 零部件设计验证报告DVR | 1d | 2022-11-03 | 2022-11-04 | 548 | 134d |  | 2023/7/23 | DRE |
| 550 | 4.26.3 | 电池包总成设计验证报告DVR | 60d | 2023-01-05 | 2023-03-16 | 405, 537 | 18d | 0d | 2023/7/23 | 张俊召 |
| 551 | 4.26.4 | 设计验证问题记录 | 3d | 2023-03-16 | 2023-03-20 | 550 | 18d |  | 2023/7/23 | 张俊召 |
| 552 | 4.26.5 | 试验总结报告 | 3d | 2023-03-16 | 2023-03-20 | 550 | 18d |  | 2023/7/23 | 张俊召 |
| 553 | 4.27 | **安全可靠性评估** | 5d | 2023-03-20 | 2023-03-25 | 547 | 104d |  | 2023/7/23 |  |
| 554 | 4.27.1 | 电芯安全可靠性评估报告 | 5d | 2023-03-20 | 2023-03-25 |  | 104d |  | 2023/7/23 | 魏廷亮 |
| 555 | 4.27.2 | 制造安全可靠性评估 | 5d | 2023-03-20 | 2023-03-25 |  | 104d |  | 2023/7/23 | EHS工程师 |
| 556 | 4.28 | **B样软件冻结发布** | 50d | 2022-11-14 | 2023-01-11 | 409 | 167d |  | 2023/7/23 |  |
| 557 | 4.28.1 | B样软件整车测试用例（如需） | 50d | 2022-11-14 | 2023-01-11 |  | 177d |  | 2023/7/23 | 权禹铭 |
| 558 | 4.28.2 | B样软件整车测试报告（如需） | 50d | 2022-11-14 | 2023-01-11 |  | 177d |  | 2023/7/23 | 权禹铭 |
| 559 | 4.28.3 | B样软件整车测试缺陷问题跟踪记录表 | 50d | 2022-11-14 | 2023-01-11 |  | 177d |  | 2023/7/23 | 权禹铭 |
| 560 | 4.28.4 | B样软件成熟度评审记录表 | 50d | 2022-11-14 | 2023-01-11 |  | 177d |  | 2023/7/23 | 权禹铭 |
| 561 | 4.28.5 | B样软件问题清单 | 50d | 2022-11-14 | 2023-01-11 |  | 177d |  | 2023/7/23 | 权禹铭 |
| 562 | 4.28.6 | B样软件释放审批表 | 50d | 2022-11-14 | 2023-01-11 |  | 177d |  | 2023/7/23 | 权禹铭 |
| 563 | 4.28.7 | B样软件冻结版 | 50d | 2022-11-14 | 2023-01-11 |  | 177d |  | 2023/7/23 | 权禹铭 |
| 564 | 4.28.8 | B样软件版本记录表 | 50d | 2022-11-14 | 2023-01-11 |  | 177d |  | 2023/7/23 | 权禹铭 |
| 565 | 4.29 | **项目成本第二次核算** | 5d | 2023-03-20 | 2023-03-25 | 547 | 104d |  | 2023/7/23 |  |
| 566 | 4.29.1 | 本阶段投资收益分析报告 | 5d | 2023-03-20 | 2023-03-25 |  | 114d |  | 2023/7/23 | 范甄妮 |
| 567 | 4.30 | **确定各阶段质量目标及质量追踪** | 5d | 2023-03-20 | 2023-03-25 | 547 | 104d |  | 2023/7/23 |  |
| 568 | 4.30.1 | 本阶段质量目标确认表 | 5d | 2023-03-20 | 2023-03-25 |  | 114d |  | 2023/7/23 | 王成林 |
| 569 | 4.30.2 | 应规避问题检查表 | 5d | 2023-03-20 | 2023-03-25 |  | 114d |  | 2023/7/23 | 王成林 |
| 570 | 4.30.3 | 质量问题清单 | 5d | 2023-03-20 | 2023-03-25 |  | 114d |  | 2023/7/23 | 王成林 |

| ID | WBS | Task | Duration | Start | Finish | Predecessors | Total slack | Free slack | 要求补充时间 | 责任人 | 责任环节 |
| --- | --- | --- | --- | --- | --- | --- | --- | --- | --- | --- | --- |
| 571 | 4.31 | **项目变更管理** | 5d | 2023-03-20 | 2023-03-25 | 547 | 104d |  | 2023/7/23 |  |  |
| 572 | 4.31.1 | 项目变更清单 | 5d | 2023-03-20 | 2023-03-25 |  | 104d |  | 2023/7/23 | 李万强 |  |
| 573 | 4.32 | **项目风险识别** | 5d | 2023-03-20 | 2023-03-25 | 547 | 104d |  | 2023/7/23 |  |  |
| 574 | 4.32.1 | 项目风险清单 | 5d | 2023-03-20 | 2023-03-25 |  | 104d |  | 2023/7/23 | 李万强 |  |
| 575 | 4.33 | **项目阀门评审** | 5d | 2023-03-20 | 2023-03-25 | 547 | 99d | 0d | 2023/7/23 |  |  |
| 576 | 4.33.1 | 质量阀评审报告 | 5d | 2023-03-20 | 2023-03-25 |  | 99d |  | 2023/7/23 | 李万强 |  |
| 577 | 4.34 | **项目阶段绩效评价** | 5d | 2023-03-25 | 2023-03-31 | 575 | 99d |  | 2023/7/23 |  |  |
| 578 | 4.34.1 | 项目整体阶段性评价表 | 5d | 2023-03-25 | 2023-03-31 |  | 109d |  | 2023/7/23 | 李万强 |  |
| 579 | 5 | **G3生产准备阶段** | 55d? | 2023-03-20 | 2023-05-30 |  | 18d | 0d |  |  |  |
| 580 | 5.1 | **阶段策划** | 5d | 2023-03-31 | 2023-04-06 | 334 | 99d |  |  |  |  |
| 581 | 5.1.1 | 项目一级开发计划(更新) | 5d | 2023-03-31 | 2023-04-06 |  | 99d |  | 7/25 | 李万强 | 项目管理部 |
| 582 | 5.1.2 | 项目二级开发计划 | 5d | 2023-03-31 | 2023-04-06 |  | 99d |  | 7/25 | 李万强 | 项目管理部 |
| 583 | 5.1.3 | 项目三级开发计划 | 5d | 2023-03-31 | 2023-04-06 |  | 99d |  | 7/25 | 各一环代表 | 各部门 |
| 584 | 5.1.4 | 项目小组成员名单和职责分工表 | 3d | 2023-03-31 | 2023-04-04 |  | 101d |  | 7/25 |  | 项目管理部 |
| 585 | 5.2 | **设计要求确定** | 5d | 2023-03-20 | 2023-03-25 | 547 | 18d | 0d | 7/25 |  |  |
| 586 | 5.2.1 | 电池包总成开发技术要求书STS | 5d | 2023-03-20 | 2023-03-25 |  | 18d |  | 7/25 | 骆云飞 | 产品部 |
| 587 | 5.2.2 | 零部件CTS | 5d | 2023-03-20 | 2023-03-25 |  | 18d |  | 7/25 | DRE | 研发技术部 |
| 588 | 5.3 | **方案设计** | 10d | 2023-03-25 | 2023-04-06 | 585 | 18d | 0d | 7/25 | 骆云飞 |  |
| 589 | 5.3.1 | 零部件开发计划 | 10d | 2023-03-25 | 2023-04-06 |  | 18d |  | 7/25 | 陈杨 | 研发技术部 |
| 590 | 5.3.2 | 电池包结构仿真需求输入表 | 10d | 2023-03-25 | 2023-04-06 |  | 18d |  | 7/25 | 周陈全 | 研发技术部 |
| 591 | 5.3.3 | CAE仿真报告 | 10d | 2023-03-25 | 2023-04-06 |  | 18d |  | 7/25 | 周陈全 | 研发技术部 |
| 592 | 5.3.4 | 电池包热仿真需求输入表 | 10d | 2023-03-25 | 2023-04-06 |  | 18d |  | 7/25 | 付细平 | 研发技术部 |
| 593 | 5.3.5 | CFD仿真报告 | 10d | 2023-03-25 | 2023-04-06 |  | 18d |  | 7/25 | 付细平 | 研发技术部 |
| 594 | 5.3.6 | 热失控流场仿真需求输入表 | 10d | 2023-03-25 | 2023-04-06 |  | 18d |  | 7/25 | 付细平 | 研发技术部 |
| 595 | 5.3.7 | 热失控流场仿真报告 | 10d | 2023-03-25 | 2023-04-06 |  | 18d |  | 7/25 | 付细平 | 研发技术部 |
| 596 | 5.3.8 | 电气件选型报告 | 10d | 2023-03-25 | 2023-04-06 |  | 18d |  | 7/25 | 王炟 | 研发技术部 |
| 597 | 5.3.9 | 电池系统电气原理图 | 10d | 2023-03-25 | 2023-04-06 |  | 18d |  | 7/25 | 王炟 | 研发技术部 |
| 598 | 5.3.10 | 电气件规格书 | 10d | 2023-03-25 | 2023-04-06 |  | 18d |  | 7/25 | 王炟 | 研发技术部 |
| 599 | 5.3.11 | 电气安全评估报告 | 10d | 2023-03-25 | 2023-04-06 |  | 18d |  | 7/25 | 王炟 | 研发技术部 |
| 600 | 5.3.12 | 热安全评估报告 | 10d | 2023-03-25 | 2023-04-06 |  | 18d |  | 7/25 | 蒋攀 | 研发技术部 |
| 601 | 5.3.13 | 机械安全评估报告 | 10d | 2023-03-25 | 2023-04-06 |  | 18d |  | 7/25 | 陈杨 | 研发技术部 |
| 602 | 5.3.14 | 水温传感器规格书 | 10d | 2023-03-25 | 2023-04-06 |  | 18d |  | 7/25 | 吴泽峰 | 研发技术部 |
| 603 | 5.3.15 | 热管理策略 | 10d | 2023-03-25 | 2023-04-06 |  | 18d |  | 7/25 | 吴泽峰 | 研发技术部 |
| 604 | 5.3.16 | 热安全预警策略 | 10d | 2023-03-25 | 2023-04-06 |  | 18d |  | 7/25 | 蒋攀 | 研发技术部 |
| 605 | 5.3.17 | PACK尺寸链校核报告 | 10d | 2023-03-25 | 2023-04-06 |  | 18d |  | 7/25 | 陈杨 | 研发技术部 |
| 606 | 5.3.18 | 标准件选型及扭矩清单 | 10d | 2023-03-25 | 2023-04-06 |  | 18d |  | 7/25 | 陈杨 | 研发技术部 |
| 607 | 5.3.19 | 汇流排截面尺寸校核报告 | 10d | 2023-03-25 | 2023-04-06 |  | 18d |  | 7/25 | 陈杨 | 研发技术部 |
| 608 | 5.3.20 | 整包密封性设计校核报告 | 10d | 2023-03-25 | 2023-04-06 |  | 18d |  | 7/25 | 陈杨 | 研发技术部 |
| 609 | 5.3.21 | DMU校核报告 | 10d | 2023-03-25 | 2023-04-06 |  | 18d |  | 7/25 | 陈杨 | 研发技术部 |
| 610 | 5.3.22 | 电池包总成3D数据 | 10d | 2023-03-25 | 2023-04-06 |  | 18d |  | 7/25 | 陈杨 | 研发技术部 |
| 611 | 5.3.23 | 电池包总成2D图纸 | 10d | 2023-03-25 | 2023-04-06 |  | 18d |  | 7/25 | 陈杨 | 研发技术部 |
| 612 | 5.3.24 | 电池包设计寿命评估报告 | 10d | 2023-03-25 | 2023-04-06 |  | 18d |  | 7/25 |  | 产品部 |
| 613 | 5.3.25 | 模组膨胀力仿真报告 | 10d | 2023-03-25 | 2023-04-06 |  | 18d |  | 7/25 | 李详 | 研发技术部 |
| 614 | 5.3.26 | 柱碰仿真结果 | 10d | 2023-03-25 | 2023-04-06 |  | 18d |  | 7/25 | 骆云飞 | 产品部 |
| 615 | 5.3.27 | 动力经济性仿真报告 | 10d | 2023-03-25 | 2023-04-06 |  | 18d |  | 7/25 | 骆云飞 | 产品部 |
| 616 | 5.3.28 | EBOM | 10d | 2023-03-25 | 2023-04-06 |  | 18d |  | 7/25 | 骆云飞 | 产品部 |
| 617 | 5.3.29 | 装配技术要求书 | 10d | 2023-03-25 | 2023-04-06 |  | 18d |  | 7/25 | 骆云飞 | 产品部 |
| 618 | 5.3.30 | 零部件设计检查表 | 10d | 2023-03-25 | 2023-04-06 |  | 18d |  | 7/25 | 陈杨 | 研发技术部 |
| 619 | 5.3.31 | 子系统设计方案 | 10d | 2023-03-25 | 2023-04-06 |  | 18d |  | 7/25 | 陈杨 | 研发技术部 |
| 620 | 5.3.32 | 零部件3D数据 | 10d | 2023-03-25 | 2023-04-06 |  | 18d |  | 7/25 | 陈杨 | 研发技术部 |
| 621 | 5.3.33 | 零部件2D图纸 | 10d | 2023-03-25 | 2023-04-06 |  | 18d |  | 7/25 | 陈杨 | 研发技术部 |
| 622 | 5.3.34 | 电池包总成设计方案 | 10d | 2023-03-25 | 2023-04-06 |  | 18d |  | 7/25 | 骆云飞 | 产品部 |
| 623 | 5.3.35 | 电池包设计寿命评估报告 | 10d | 2023-03-25 | 2023-04-06 |  | 18d |  | 7/25 | 骆云飞 | 产品部 |
| 624 | 5.3.36 | 零部件开发进度管控表 | 10d | 2023-03-25 | 2023-04-06 |  | 18d |  | 7/25 | 骆云飞 | 产品部 |
| 625 | 5.3.37 | 电芯参数表 | 10d | 2023-03-25 | 2023-04-06 |  | 18d |  | 7/25 | 陈柯嘉 | 产品部 |
| 626 | 5.3.38 | 电芯EOL下线检测技术要求 | 10d | 2023-03-25 | 2023-04-06 |  | 18d |  | 7/25 | 陈柯嘉 | 产品部 |
| 627 | 5.3.39 | 电芯规格书 | 10d | 2023-03-25 | 2023-04-06 |  | 18d |  | 7/25 | 陈柯嘉 | 产品部 |
| 628 | 5.3.40 | BMS软件开发数据表 | 10d | 2023-03-25 | 2023-04-06 |  | 18d |  | 7/25 | 骆云飞 | 产品部 |
| 629 | 5.3.41 | 电池包总成DFMEA | 10d | 2023-03-25 | 2023-04-06 |  | 18d |  | 7/25 | 骆云飞 | 研发技术部 |
| 630 | 5.3.42 | 电池包总成特殊特性清单 | 10d | 2023-03-25 | 2023-04-06 |  | 18d |  | 7/25 | 骆云飞 | 产品部 |
| 631 | 5.3.43 | 零部件特殊特性清单 | 10d | 2023-03-25 | 2023-04-06 |  | 18d |  | 7/25 | 陈杨 | 研发技术部 |
| 632 | 5.3.44 | Pack EOL下线检测技术条件 | 10d | 2023-03-25 | 2023-04-06 |  | 18d |  | 7/25 | 骆云飞 | 产品部 |

| ID | WBS | Task | Duration | Start | Finish | Predecessors | Total slack | Free slack | 责任人 | 要求补充时间 | 责任环节 |
| --- | --- | --- | --- | --- | --- | --- | --- | --- | --- | --- | --- |
| 633 | 5.4 | **可制造性分析** | 3d | 2023-04-06 | 2023-04-10 | 588 | 91d | 0d | 梁元伟 | 7/25 |  |
| 634 | 5.4.1 | 可制造性分析报告 | 3d | 2023-04-06 | 2023-04-10 |  | 91d |  | 梁元伟 | 7/25 | 新产品导入部 |
| 635 | 5.4.2 | SE分析清单 | 3d | 2023-04-06 | 2023-04-10 |  | 91d |  | 骆云飞 | 7/25 | 新产品导入部 |
| 636 | 5.5 | **设计冻结发布** | 5d | 2023-04-10 | 2023-04-15 | 588, 633 | 91d |  |  | 7/25 |  |
| 637 | 5.5.1 | 子系统设计冻结评审报告 | 5d | 2023-04-10 | 2023-04-15 |  | 91d |  | 陈杨 | 7/25 | 研发技术部 |
| 638 | 5.5.2 | 电池包总成设计冻结评审报告 | 3d | 2023-04-10 | 2023-04-13 |  | 93d |  | 骆云飞 | 7/25 | 产品部 |
| 639 | 5.5.3 | 供应商定点需求函 | 3d | 2023-04-10 | 2023-04-13 |  | 93d |  | 陈杨 | 7/25 | 研发技术部/采购部 |
| 640 | 5.6 | **禁用物质排查** | 7d | 2023-04-06 | 2023-04-14 | 588 | 92d |  |  | 7/25 |  |
| 641 | 5.6.1 | 零部件禁用物质报告 | 7d | 2023-04-06 | 2023-04-14 |  | 92d |  | 陈杨 | 7/25 | 研发技术部 |
| 642 | 5.7 | **零部件OTS认可** | 15d | 2023-04-06 | 2023-04-25 | 588 | 84d |  |  | 7/25 |  |
| 643 | 5.7.1 | 零部件全尺寸测试报告 | 15d | 2023-04-06 | 2023-04-25 |  | 84d |  | 陈杨 | 7/25 | 研发技术部 |
| 644 | 5.7.2 | 原材料试验报告 | 15d | 2023-04-06 | 2023-04-25 |  | 84d |  | 陈杨 | 7/25 | 研发技术部 |
| 645 | 5.7.3 | 零部件性能试验报告 | 15d | 2023-04-06 | 2023-04-25 |  | 84d |  | 陈杨 | 7/25 | 研发技术部 |
| 646 | 5.7.4 | 零部件OTS认可报告 | 15d | 2023-04-06 | 2023-04-25 |  | 84d |  | 陈杨 | 7/25 | 研发技术部 |
| 647 | 5.8 | **C样软件初版发布** | 20d | 2023-04-06 | 2023-05-02 | 588 | 39d | 0d |  | 7/25 |  |
| 648 | 5.8.1 | C样软件DFMEA（更新） | 20d | 2023-04-06 | 2023-05-02 |  | 39d |  | 权禹铭 | 7/25 | BMS开发部 |
| 649 | 5.8.2 | C样软件需求规格书 | 20d | 2023-04-06 | 2023-05-02 |  | 39d |  | 权禹铭 | 7/25 | BMS开发部 |
| 650 | 5.8.3 | C样软件系统接口规范 | 20d | 2023-04-06 | 2023-05-02 |  | 39d |  | 权禹铭 | 7/25 | BMS开发部 |
| 651 | 5.8.4 | C样软件需求分析报告 | 20d | 2023-04-06 | 2023-05-02 |  | 39d |  | 权禹铭 | 7/25 | BMS开发部 |
| 652 | 5.8.5 | C样软件需求验证准则 | 20d | 2023-04-06 | 2023-05-02 |  | 39d |  | 权禹铭 | 7/25 | BMS开发部 |
| 653 | 5.8.6 | C样软件需求追溯表 | 20d | 2023-04-06 | 2023-05-02 |  | 39d |  | 权禹铭 | 7/25 | BMS开发部 |
| 654 | 5.8.7 | C样软件架构设计说明书 | 20d | 2023-04-06 | 2023-05-02 |  | 39d |  | 权禹铭 | 7/25 | BMS开发部 |
| 655 | 5.8.8 | C样软件接口列表 | 20d | 2023-04-06 | 2023-05-02 |  | 39d |  | 权禹铭 | 7/25 | BMS开发部 |
| 656 | 5.8.9 | C样软件架构追溯表 | 20d | 2023-04-06 | 2023-05-02 |  | 39d |  | 权禹铭 | 7/25 | BMS开发部 |
| 657 | 5.8.10 | C样软件详细设计说明书 | 20d | 2023-04-06 | 2023-05-02 |  | 39d |  | 权禹铭 | 7/25 | BMS开发部 |
| 658 | 5.8.11 | C样软件单元测试用例 | 20d | 2023-04-06 | 2023-05-02 |  | 39d |  | 权禹铭 | 7/25 | BMS开发部 |
| 659 | 5.8.12 | C样软件单元测试缺陷问题跟踪记录表 | 20d | 2023-04-06 | 2023-05-02 |  | 39d |  | 权禹铭 | 7/25 | BMS开发部 |
| 660 | 5.8.13 | C样软件单元测试报告 | 20d | 2023-04-06 | 2023-05-02 |  | 39d |  | 权禹铭 | 7/25 | BMS开发部 |
| 661 | 5.8.14 | C样集成软件 | 20d | 2023-04-06 | 2023-05-02 |  | 39d |  | 权禹铭 | 7/25 | BMS开发部 |
| 662 | 5.8.15 | C样集成软件测试用例 | 20d | 2023-04-06 | 2023-05-02 |  | 39d |  | 权禹铭 | 7/25 | BMS开发部 |
| 663 | 5.8.16 | C样软件集成测试报告 | 20d | 2023-04-06 | 2023-05-02 |  | 39d |  | 权禹铭 | 7/25 | BMS开发部 |
| 664 | 5.8.17 | C样软件系统测试用例 | 20d | 2023-04-06 | 2023-05-02 |  | 39d |  | 权禹铭 | 7/25 | BMS开发部 |
| 665 | 5.8.18 | C样软件系统测试缺陷问题跟踪记录表 | 20d | 2023-04-06 | 2023-05-02 |  | 39d |  | 权禹铭 | 7/25 | BMS开发部 |
| 666 | 5.8.19 | C样软件系统测试报告 | 20d | 2023-04-06 | 2023-05-02 |  | 39d |  | 权禹铭 | 7/25 | BMS开发部 |
| 667 | 5.8.20 | C样软件系统测试追溯表 | 20d | 2023-04-06 | 2023-05-02 |  | 39d |  | 权禹铭 | 7/25 | BMS开发部 |
| 668 | 5.8.21 | C样初版发布软件 | 20d | 2023-04-06 | 2023-05-02 |  | 39d |  | 权禹铭 | 7/25 | BMS开发部 |
| 669 | 5.8.22 | C样软件需求澄清沟通记录（委外） | 20d | 2023-04-06 | 2023-05-02 |  | 39d |  | 权禹铭 | 7/25 | BMS开发部 |
| 670 | 5.8.23 | C样软件开发审视问题表（委外） | 20d | 2023-04-06 | 2023-05-02 |  | 39d |  | 权禹铭 | 7/25 | BMS开发部 |
| 671 | 5.8.24 | C样软件版本记录表 | 20d | 2023-04-06 | 2023-05-02 |  | 39d |  | 权禹铭 | 7/25 | BMS开发部 |
| 672 | 5.8.25 | C样软件约定其他交付物（委外） | 20d | 2023-04-06 | 2023-05-02 |  | 39d |  | 权禹铭 | 7/25 | BMS开发部 |

| ID | WBS | Task | Duration | Start | Finish | Predecessors | Total slack | Free slack | 要求补充时间 | 责任人 | 责任环节 |
| --- | --- | --- | --- | --- | --- | --- | --- | --- | --- | --- | --- |
| 673 | 5.9 | **全工装样件工艺策划** | 5d | 2023-04-06 | 2023-04-12 | 588 | 89d | 0d | 7/25 |  |  |
| 674 | 5.9.1 | PFMEA | 5d | 2023-04-06 | 2023-04-12 |  | 89d |  | 7/25 | 梁元伟 | 新产品导入部 |
| 675 | 5.9.2 | 过程特殊特性清单 | 5d | 2023-04-06 | 2023-04-12 |  | 89d |  | 7/25 | 梁元伟 | 新产品导入部 |
| 676 | 5.9.3 | 试生产过程流程图 | 5d | 2023-04-06 | 2023-04-12 |  | 89d |  | 7/25 | 梁元伟 | 新产品导入部 |
| 677 | 5.9.4 | 试生产CP | 5d | 2023-04-06 | 2023-04-12 |  | 89d |  | 7/25 | 梁元伟 | 新产品导入部 |
| 678 | 5.9.5 | 试生产作业指导书 | 5d | 2023-04-06 | 2023-04-12 |  | 89d |  | 7/25 | 梁元伟 | 新产品导入部 |
| 679 | 5.9.6 | 试生产检验作业指导书 | 5d | 2023-04-06 | 2023-04-12 |  | 89d |  | 7/25 | 王成林 | 品质部 |
| 680 | 5.9.7 | 设备操作指导书 | 5d | 2023-04-06 | 2023-04-12 |  | 89d |  | 7/25 | 毛方东 | 制造技术部 |
| 681 | 5.9.8 | 生产线平面布置图（如有） | 5d | 2023-04-06 | 2023-04-12 |  | 89d |  | 7/25 | 梁元伟 | 精益生产部 |
| 682 | 5.9.9 | 节拍分析报告 | 5d | 2023-04-06 | 2023-04-12 |  | 89d |  | 7/25 | 向永川 | 工艺技术部 |
| 683 | 5.9.10 | 防错方案 | 5d | 2023-04-06 | 2023-04-12 |  | 89d |  | 7/25 | 向永川 | 工艺技术部 |
| 684 | 5.9.11 | 过程追溯清单确认表 | 5d | 2023-04-06 | 2023-04-12 |  | 89d |  | 7/25 | 向永川 | 工艺技术部 |
| 685 | 5.9.12 | 工艺文件发放记录 | 5d | 2023-04-06 | 2023-04-12 |  | 89d |  | 7/25 | 梁元伟 | 新产品导入部 |
| 686 | 5.10 | **试生产员工培训** | 5d | 2023-04-12 | 2023-04-18 | 673 | 89d |  | 7/25 |  |  |
| 687 | 5.10.1 | 人员培训记录表 | 5d | 2023-04-12 | 2023-04-18 |  | 89d |  | 7/25 | 边春洋 | 新产品导入部/ 生产部 |
| 688 | 5.10.2 | 人员技能矩阵表 | 5d | 2023-04-12 | 2023-04-18 |  | 89d |  | 7/25 | 边春洋 | 新产品导入部/ 生产部 |
| 689 | 5.11 | **工艺验证** | 5d? | 2023-04-12 | 2023-04-18 | 673 | 89d |  | 7/25 |  |  |
| 690 | 5.11.1 | 工艺验证清单 | 3d | 2023-04-12 | 2023-04-15 |  | 91d |  | 7/25 | 向永川 | 工艺技术部 |
| 691 | 5.11.2 | 工艺验证物料清单 | 3d | 2023-04-12 | 2023-04-15 |  | 91d |  | 7/25 | 向永川 | 工艺技术部 |
| 692 | 5.11.3 | 工艺验证物料采购单 | 3d | 2023-04-12 | 2023-04-15 |  | 91d |  | 7/25 | 梁元伟 | 新产品导入部 |
| 693 | 5.11.4 | 工艺参数验证及验证报告 | 5d | 2023-04-12 | 2023-04-18 |  | 89d |  | 7/25 | 向永川 | 工艺技术部 |
| 694 | 5.11.5 | 工艺验证问题记录 | 1d? | 2023-04-12 | 2023-04-13 |  | 93d |  | 7/25 | 梁元伟 | 工艺技术部 |
| 695 | 5.11.6 | 测试规程 | 5d | 2023-04-12 | 2023-04-18 |  | 89d |  | 7/25 | 梁元伟 | 工艺技术部 |
| 696 | 5.12 | **质量检验准备** | 7d | 2023-04-06 | 2023-04-14 | 588 | 92d |  | 7/25 |  |  |
| 697 | 5.12.1 | 产品技术规格书 | 7d | 2023-04-06 | 2023-04-14 |  | 92d |  | 7/25 | 骆云飞 | 产品部 |
| 698 | 5.12.2 | 电芯/模组外观交收检验标准 | 7d | 2023-04-06 | 2023-04-14 |  | 92d |  | 7/25 | 陈柯嘉 | 产品部 |
| 699 | 5.12.3 | 产品审核清单 | 7d | 2023-04-06 | 2023-04-14 |  | 92d |  | 7/25 | 王成林 | 产品部 |
| 700 | 5.12.4 | 产品拆解作业指导书 | 7d | 2023-04-06 | 2023-04-14 |  | 92d |  | 7/25 | 佘扬 | 新产品导入部 |
| 701 | 5.12.5 | 零部件检验控制计划 | 7d | 2023-04-06 | 2023-04-14 |  | 92d |  | 7/25 | 聂广 | 品质部 |
| 702 | 5.12.6 | 零部件检验基准书 | 7d | 2023-04-06 | 2023-04-14 |  | 92d |  | 7/25 | 聂广 | 品质部 |
| 703 | 5.12.7 | 成品检验作业指导书 | 7d | 2023-04-06 | 2023-04-14 |  | 92d |  | 7/25 | 王成林 | 品质部 |
| 704 | 5.12.8 | MSA计划 | 7d | 2023-04-06 | 2023-04-14 |  | 92d |  | 7/25 | 王成林 | 品质部 |
| 705 | 5.12.9 | SPC计划 | 7d | 2023-04-06 | 2023-04-14 |  | 92d |  | 7/25 | 王成林 | 品质部 |

| ID | WBS | Task | Duration | Start | Finish | Predecessors | Total slack | Free slack | 要求补充时间 | 责任人 | 责任环节 |
| --- | --- | --- | --- | --- | --- | --- | --- | --- | --- | --- | --- |
| 706 | 5.13 | **PV实验及物料准备** | 7d? | 2023-04-06 | 2023-04-14 | 588 | 92d |  | 7/25 |  |  |
| 707 | 5.13.1 | 电池包总成生产PV验证大纲 | 5d | 2023-04-06 | 2023-04-12 |  | 94d |  | 7/25 | 梁元伟 | 新产品导入部 |
| 708 | 5.13.2 | 电芯量产ORT测试大纲 | 7d | 2023-04-06 | 2023-04-14 |  | 92d |  | 7/25 | 陈柯嘉 | 产品部 |
| 709 | 5.13.3 | PVP试验计划 | 5d | 2023-04-06 | 2023-04-12 |  | 94d |  | 7/25 | 张俊召 | 测试部 |
| 710 | 5.13.4 | 试验物料需求 | 3d | 2023-04-06 | 2023-04-10 |  | 96d |  | 7/25 | 张俊召 | 测试部 |
| 711 | 5.13.5 | 试验案例策划 | 3d | 2023-04-06 | 2023-04-10 |  | 96d |  | 7/25 | 张俊召 | 测试部 |
| 712 | 5.13.6 | 委外试验需求 | 3d | 2023-04-06 | 2023-04-10 |  | 96d |  | 7/25 | 张俊召 | 测试部 |
| 713 | 5.13.7 | 试验工装设计图纸 | 1d? | 2023-04-06 | 2023-04-07 |  | 98d |  | 7/25 |  | 工艺技术部 |
| 714 | 5.13.8 | 试验工装CAE分析报告 | 1d? | 2023-04-06 | 2023-04-07 |  | 98d |  | 7/25 |  | 工艺技术部 |
| 715 | 5.13.9 | 试验工装评审报告 | 1d? | 2023-04-06 | 2023-04-07 |  | 98d |  | 7/25 |  | 工艺技术部 |
| 716 | 5.13.10 | 试验工装验收报告 | 1d? | 2023-04-06 | 2023-04-07 |  | 98d |  | 7/25 |  | 工艺技术部 |
| 717 | 5.14 | **安全可靠性评估** | 5d | 2023-04-06 | 2023-04-12 | 588 | 94d |  | 7/25 |  |  |
| 718 | 5.14.1 | 电芯安全可靠性评估报告 | 5d | 2023-04-06 | 2023-04-12 |  | 94d |  | 7/25 | 陈柯嘉 | 产品部 |
| 719 | 5.14.2 | 制造安全可靠性评估 | 5d | 2023-04-06 | 2023-04-12 |  | 94d |  | 7/25 | 梁元伟 | 综合管理部 |
| 720 | 5.15 | **C样软件发布** | 20d | 2023-05-02 | 2023-05-30 | 647 | 39d | 0d | 7/25 |  |  |
| 721 | 5.15.1 | C样软件整车测试用例（如需） | 20d | 2023-05-02 | 2023-05-30 |  | 39d |  | 7/25 | 权禹铭 | BMS开发部 |
| 722 | 5.15.2 | C样软件整车测试报告（如需） | 20d | 2023-05-02 | 2023-05-30 |  | 39d |  | 7/25 | 权禹铭 | BMS开发部 |
| 723 | 5.15.3 | C样软件整车测试缺陷问题跟踪记录表 | 20d | 2023-05-02 | 2023-05-30 |  | 39d |  | 7/25 | 权禹铭 | BMS开发部 |
| 724 | 5.15.4 | C样软件成熟度评审记录表 | 20d | 2023-05-02 | 2023-05-30 |  | 39d |  | 7/25 | 权禹铭 | BMS开发部 |
| 725 | 5.15.5 | C样软件问题清单 | 20d | 2023-05-02 | 2023-05-30 |  | 39d |  | 7/25 | 权禹铭 | BMS开发部 |
| 726 | 5.15.6 | C样软件释放审批表 | 20d | 2023-05-02 | 2023-05-30 |  | 39d |  | 7/25 | 权禹铭 | BMS开发部 |
| 727 | 5.15.7 | C样软件冻结版 | 20d | 2023-05-02 | 2023-05-30 |  | 39d |  | 7/25 | 权禹铭 | BMS开发部 |
| 728 | 5.15.8 | C样软件版本记录表 | 20d | 2023-05-02 | 2023-05-30 |  | 39d |  | 7/25 | 权禹铭 | BMS开发部 |
| 729 | 5.16 | **样包生产计划** | 3d | 2023-04-12 | 2023-04-15 | 673 | 91d |  | 7/25 |  |  |
| 730 | 5.16.1 | 样包生产执行计划 | 3d | 2023-04-12 | 2023-04-15 |  | 91d |  | 7/25 | 李万强 | 项目管理部 |
| 731 | 5.16.2 | 研发物料请示报告 | 3d | 2023-04-12 | 2023-04-15 |  | 91d |  | 7/25 | 陈杨 | 研发技术部 |

| ID | WBS | Task | Duration | Start | Finish | Predecessors | Total slack | Free slack | Constraint | 要求补充时间 | 责任人 | 责任环节 |
| --- | --- | --- | --- | --- | --- | --- | --- | --- | --- | --- | --- | --- |
| 732 | 5.17 | **全工装样件采购** | 25d | 2023-04-06 | 2023-05-09 | 588 | 18d | 0d |  | 7/25 |  |  |
| 733 | 5.17.1 | 样件试制订单 | 3d | 2023-04-06 | 2023-04-10 |  | 40d |  |  | 7/25 | 周密 | 采购部 |
| 734 | 5.17.2 | 零部件问题清单 | 25d | 2023-04-06 | 2023-05-09 |  | 18d |  |  | 7/25 | 陈杨 | 研发技术部 |
| 735 | 5.17.3 | 零部件到货计划 | 25d | 2023-04-06 | 2023-05-09 |  | 18d |  |  | 7/25 | 周密 | 采购部 |
| 736 | 5.17.4 | 零部件来料问题清单 | 25d | 2023-04-06 | 2023-05-09 |  | 18d |  |  | 7/25 | 聂广 | 品质部 |
| 737 | 5.17.5 | 外购件厂家出货检验基准书 | 25d | 2023-04-06 | 2023-05-09 |  | 18d |  |  | 7/25 | 叶亚宝 | 品质部 |
| 738 | 5.17.6 | 外购件厂家出货检验报告 | 25d | 2023-04-06 | 2023-05-09 |  | 18d |  |  | 7/25 | 叶亚宝 | 品质部 |
| 739 | 5.18 | **物料包装方案策划** | 15d | 2023-04-06 | 2023-04-25 | 588 | 84d |  |  | 7/25 |  |  |
| 740 | 5.18.1 | 零部件包装方案 | 15d | 2023-04-06 | 2023-04-25 |  | 84d |  |  | 7/25 | 秦飞 | 计划部 |
| 741 | 5.18.2 | 总成包装方案 | 15d | 2023-04-06 | 2023-04-25 |  | 84d |  |  | 7/25 | 秦飞 | 计划部 |
| 742 | 5.19 | **项目成本第三次结算** | 15d | 2023-04-06 | 2023-04-25 | 588 | 84d |  |  | 7/25 |  |  |
| 743 | 5.19.1 | 本阶段投资收益分析报告 | 15d | 2023-04-06 | 2023-04-25 |  | 84d |  |  | 7/25 | 赵林 | 财会部 |
| 744 | 5.20 | **确定各阶段质量目标及质量追踪** | 5d | 2023-04-20 | 2023-04-27 | 752FS-10d | 82d |  |  | 7/25 |  |  |
| 745 | 5.20.1 | 本阶段质量目标确认表 | 5d | 2023-04-20 | 2023-04-27 |  | 82d |  |  | 7/25 | 王成林 | 品质部 |
| 746 | 5.20.2 | OTS生产准备就绪审核报告 | 5d | 2023-04-20 | 2023-04-27 |  | 82d |  |  | 7/25 | 梁元伟 | 新产品导入部 |
| 747 | 5.20.3 | 质量问题清单 | 5d | 2023-04-20 | 2023-04-27 |  | 82d |  |  | 7/25 | 王成林 | 品质部 |
| 748 | 5.21 | **项目变更管理** | 5d | 2023-04-20 | 2023-04-27 |  | 82d |  |  | 7/25 | 李万强 |  |
| 749 | 5.21.1 | 项目变更清单 | 5d | 2023-04-20 | 2023-04-27 | 752FS-10d | 82d |  |  | 7/25 | 李万强 | 项目管理部 |
| 750 | 5.22 | **项目风险识别** | 5d | 2023-04-20 | 2023-04-27 | 752FS-10d | 82d |  |  | 7/25 | 李万强 |  |
| 751 | 5.22.1 | 项目风险清单 | 5d | 2023-04-20 | 2023-04-27 |  | 82d |  |  | 7/25 | 李万强 | 项目管理部 |
| 752 | 5.23 | **项目阀门评审** | 3d | 2023-05-01 | 2023-05-04 |  | 74d | 0d |  | 7/25 | 李万强 |  |
| 753 | 5.23.1 | 质量阀评审报告 | 3d | 2023-05-01 | 2023-05-04 |  | 74d |  | start no earlier than 2023-05-01 | 7/25 | 李万强 | 项目管理部 |
| 754 | 5.24 | **项目阶段绩效评价** | 3d | 2023-05-04 | 2023-05-09 | 752 | 74d |  |  | 7/25 | 李万强 |  |
| 755 | 5.24.1 | 项目整体阶段性评价表 | 3d | 2023-05-04 | 2023-05-09 |  | 74d |  |  | 7/25 | 李万强 | 项目管理部 |

| ID | WBS | Task | Duration | Start | Finish | Predecessors | Total slack | Free slack | 责任人 | 要求补充时间 |
| --- | --- | --- | --- | --- | --- | --- | --- | --- | --- | --- |
| 756 | 6 | **G2工程认可阶段** | 50d? | 2023-05-02 | 2023-07-11 |  | 23d |  |  |  |
| 757 | 6.1 | **阶段策划** | 5d | 2023-05-30 | 2023-06-06 | 579 | 64d |  |  |  |
| 758 | 6.1.1 | 项目一级开发计划(更新) | 3d | 2023-05-30 | 2023-06-02 |  | 66d |  | 李万强 |  |
| 759 | 6.1.2 | 项目二级开发计划 | 5d | 2023-05-30 | 2023-06-06 |  | 64d |  | 李万强 |  |
| 760 | 6.1.3 | 项目三级开发计划 | 5d | 2023-05-30 | 2023-06-06 |  | 64d |  | 各版块代表 |  |
| 761 | 6.1.4 | 项目小组成员名单和职责分工表 | 3d | 2023-05-30 | 2023-06-02 |  | 66d |  | 李万强 |  |
| 762 | 6.2 | **过程设计记录保持有效** | 10d | 2023-05-30 | 2023-06-13 | 579 | 59d |  |  |  |
| 763 | 6.2.1 | 过程设计变更清单 | 10d | 2023-05-30 | 2023-06-13 |  | 59d |  | 梁元伟 |  |
| 764 | 6.2.2 | MBOM | 10d | 2023-05-30 | 2023-06-13 |  | 59d |  | 梁元伟 |  |
| 765 | 6.2.3 | 试生产CP | 10d | 2023-05-30 | 2023-06-13 |  | 59d |  | 梁元伟 |  |
| 766 | 6.2.4 | 试生产作业指导书 | 10d | 2023-05-30 | 2023-06-13 |  | 59d |  | 梁元伟 |  |
| 767 | 6.2.5 | 工艺过程流程图 | 10d | 2023-05-30 | 2023-06-13 |  | 59d |  | 梁元伟 |  |
| 768 | 6.2.6 | 过程特殊特性清单 | 10d | 2023-05-30 | 2023-06-13 |  | 59d |  | 梁元伟 |  |
| 769 | 6.2.7 | PFMEA | 10d | 2023-05-30 | 2023-06-13 |  | 59d |  | 梁元伟 |  |
| 770 | 6.3 | **设计变更** | 10d | 2023-05-30 | 2023-06-13 | 579 | 59d |  |  |  |
| 771 | 6.3.1 | 设计变更记录 | 10d | 2023-05-30 | 2023-06-13 |  | 59d |  | DRE |  |
| 772 | 6.4 | **生产准备会** | 3d | 2023-05-02 | 2023-05-05 | 732FS-5d | 86d |  |  |  |
| 773 | 6.4.1 | 产前沟通会议记录及工艺验证检查表 | 3d | 2023-05-02 | 2023-05-05 |  | 86d |  | 梁元伟 | 7/28 |
| 774 | 6.5 | **来料检验** | 3d | 2023-05-09 | 2023-05-12 | 732 | 18d | 0d |  | 7/28 |
| 775 | 6.5.1 | 来料检验基准书 | 3d | 2023-05-09 | 2023-05-12 |  | 18d |  | 聂广 | 7/28 |
| 776 | 6.5.2 | 来料检验报告 | 3d | 2023-05-09 | 2023-05-12 |  | 18d |  | 聂广 | 7/28 |
| 777 | 6.5.3 | 外购件厂家出货检验报告 | 3d | 2023-05-09 | 2023-05-12 |  | 18d |  | 叶亚宝 | 7/28 |
| 778 | 6.6 | **样件生产及跟线** | 7d | 2023-05-12 | 2023-05-23 | 774 | 18d | 0d |  | 7/28 |
| 779 | 6.6.1 | 排产计划 | 2d | 2023-05-12 | 2023-05-16 |  | 18d | 0d | 罗永江 | 7/28 |
| 780 | 6.6.2 | 测试记录表 | 5d | 2023-05-16 | 2023-05-23 | 779 | 18d |  | 向永川 | 7/28 |
| 781 | 6.6.3 | 首样件评审表 | 5d | 2023-05-16 | 2023-05-23 | 779 | 18d |  | 梁元伟 | 7/28 |
| 782 | 6.6.4 | 试制总结报告 | 5d | 2023-05-16 | 2023-05-23 | 779 | 18d |  | 梁元伟 | 7/28 |
| 783 | 6.6.5 | 样件检验记录 | 5d | 2023-05-16 | 2023-05-23 | 779 | 18d |  | 柳波 | 7/28 |
| 784 | 6.6.6 | 静态扭矩检验记录表 | 5d | 2023-05-16 | 2023-05-23 | 779 | 18d |  | 杨智 | 7/28 |
| 785 | 6.6.7 | 样件交付记录 | 5d | 2023-05-16 | 2023-05-23 | 779 | 18d |  | 试制工艺工程师 | 7/28 |
| 786 | 6.6.8 | 试制问题清单 | 5d | 2023-05-16 | 2023-05-23 | 779 | 18d |  | 王成林 | 7/28 |
| 787 | 6.6.9 | 关键工序清单 | 5d | 2023-05-16 | 2023-05-23 | 779 | 18d |  | 向永川 | 7/28 |
| 788 | 6.6.10 | 工位认证清单 | 5d | 2023-05-16 | 2023-05-23 | 779 | 18d |  | 隆尧 | 7/28 |
| 789 | 6.6.11 | 节拍验证表 | 5d | 2023-05-16 | 2023-05-23 | 779 | 18d |  | 隆尧 | 7/28 |
| 790 | 6.6.12 | 线平衡 | 5d | 2023-05-16 | 2023-05-23 | 779 | 18d |  | 隆尧 | 7/28 |
| 791 | 6.6.13 | 工位人员排布表 | 5d | 2023-05-16 | 2023-05-23 | 779 | 18d |  | 隆尧 | 7/28 |

| ID | WBS | Task | Duration | Start | Finish | Predecessors | Total slack | 要求补充时间 | 责任人 |
| --- | --- | --- | --- | --- | --- | --- | --- | --- | --- |
| 792 | 6.7 | **PV设计验证** | 30d | 2023-05-23 | 2023-07-04 | 778 | 44d | 7/28 |  |
| 793 | 6.7.1 | 电池包总成生产验证报告PVR | 30d | 2023-05-23 | 2023-07-04 |  | 44d | 7/28 | 张俊召 |
| 794 | 6.7.2 | 设计验证问题记录 | 30d | 2023-05-23 | 2023-07-04 |  | 44d | 7/28 | 张俊召 |
| 795 | 6.7.3 | 试验总结报告 | 30d | 2023-05-23 | 2023-07-04 |  | 44d | 7/28 | 张俊召 |
| 796 | 6.8 | **量产软件发布** | 30d | 2023-05-30 | 2023-07-11 | 720 | 39d | 7/28 |  |
| 797 | 6.8.1 | 量产软件变更方案 | 30d | 2023-05-30 | 2023-07-11 |  | 39d | 7/28 | 权禹铭 |
| 798 | 6.8.2 | 量产软件变更执行单 | 30d | 2023-05-30 | 2023-07-11 |  | 39d | 7/28 | 权禹铭 |
| 799 | 6.8.3 | 量产软件DFMEA（更新） | 30d | 2023-05-30 | 2023-07-11 |  | 39d | 7/28 | 权禹铭 |
| 800 | 6.8.4 | 量产软件需求规格书 | 30d | 2023-05-30 | 2023-07-11 |  | 39d | 7/28 | 权禹铭 |
| 801 | 6.8.5 | 量产软件系统接口规范 | 30d | 2023-05-30 | 2023-07-11 |  | 39d | 7/28 | 权禹铭 |
| 802 | 6.8.6 | 量产软件需求分析报告 | 30d | 2023-05-30 | 2023-07-11 |  | 39d | 7/28 | 权禹铭 |
| 803 | 6.8.7 | 量产软件需求验证准则 | 30d | 2023-05-30 | 2023-07-11 |  | 39d | 7/28 | 权禹铭 |
| 804 | 6.8.8 | 量产软件需求追溯表 | 30d | 2023-05-30 | 2023-07-11 |  | 39d | 7/28 | 权禹铭 |
| 805 | 6.8.9 | 量产软件架构设计说明书 | 30d | 2023-05-30 | 2023-07-11 |  | 39d | 7/28 | 权禹铭 |
| 806 | 6.8.10 | 量产软件接口列表 | 30d | 2023-05-30 | 2023-07-11 |  | 39d | 7/28 | 权禹铭 |
| 807 | 6.8.11 | 量产软件架构追溯表 | 30d | 2023-05-30 | 2023-07-11 |  | 39d | 7/28 | 权禹铭 |
| 808 | 6.8.12 | 量产软件详细设计说明书 | 30d | 2023-05-30 | 2023-07-11 |  | 39d | 7/28 | 权禹铭 |
| 809 | 6.8.13 | 量产软件单元测试用例 | 30d | 2023-05-30 | 2023-07-11 |  | 39d | 7/28 | 权禹铭 |
| 810 | 6.8.14 | 量产软件单元测试缺陷问题跟踪记录表 | 30d | 2023-05-30 | 2023-07-11 |  | 39d | 7/28 | 权禹铭 |
| 811 | 6.8.15 | 量产软件单元测试报告 | 30d | 2023-05-30 | 2023-07-11 |  | 39d | 7/28 | 权禹铭 |
| 812 | 6.8.16 | 量产集成软件 | 30d | 2023-05-30 | 2023-07-11 |  | 39d | 7/28 | 权禹铭 |
| 813 | 6.8.17 | 量产集成软件测试用例 | 30d | 2023-05-30 | 2023-07-11 |  | 39d | 7/28 | 权禹铭 |
| 814 | 6.8.18 | 量产软件集成测试报告 | 30d | 2023-05-30 | 2023-07-11 |  | 39d | 7/28 | 权禹铭 |
| 815 | 6.8.19 | 量产软件系统测试用例 | 30d | 2023-05-30 | 2023-07-11 |  | 39d | 7/28 | 权禹铭 |
| 816 | 6.8.20 | 量产软件系统测试缺陷问题跟踪记录表 | 30d | 2023-05-30 | 2023-07-11 |  | 39d | 7/28 | 权禹铭 |
| 817 | 6.8.21 | 量产软件系统测试报告 | 30d | 2023-05-30 | 2023-07-11 |  | 39d | 7/28 | 权禹铭 |
| 818 | 6.8.22 | 量产软件系统测试追溯表 | 30d | 2023-05-30 | 2023-07-11 |  | 39d | 7/28 | 权禹铭 |
| 819 | 6.8.23 | 量产初版发布软件 | 30d | 2023-05-30 | 2023-07-11 |  | 39d | 7/28 | 权禹铭 |
| 820 | 6.8.24 | 量产软件需求澄清沟通记录（委外） | 30d | 2023-05-30 | 2023-07-11 |  | 39d | 7/28 | 权禹铭 |
| 821 | 6.8.25 | 量产软件开发审视问题表（委外） | 30d | 2023-05-30 | 2023-07-11 |  | 39d | 7/28 | 权禹铭 |
| 822 | 6.8.26 | 量产软件系统测试报告（委外） | 30d | 2023-05-30 | 2023-07-11 |  | 39d | 7/28 | 权禹铭 |
| 823 | 6.8.27 | 量产软件（委外） | 30d | 2023-05-30 | 2023-07-11 |  | 39d | 7/28 | 权禹铭 |
| 824 | 6.8.28 | 量产软件版本记录表（委外） | 30d | 2023-05-30 | 2023-07-11 |  | 39d | 7/28 | 权禹铭 |
| 825 | 6.8.29 | 量产软件刷写说明书（委外） | 30d | 2023-05-30 | 2023-07-11 |  | 39d | 7/28 | 权禹铭 |
| 826 | 6.8.30 | 量产软件约定其他交付物（委外） | 30d | 2023-05-30 | 2023-07-11 |  | 39d | 7/28 | 权禹铭 |
| 827 | 6.8.31 | 量产软件整车测试用例 | 30d | 2023-05-30 | 2023-07-11 |  | 39d | 7/28 | 权禹铭 |
| 828 | 6.8.32 | 量产软件整车测试报告 | 30d | 2023-05-30 | 2023-07-11 |  | 39d | 7/28 | 权禹铭 |
| 829 | 6.8.33 | 量产软件整车测试缺陷问题跟踪记录表 | 30d | 2023-05-30 | 2023-07-11 |  | 39d | 7/28 | 权禹铭 |
| 830 | 6.8.34 | 量产软件成熟度评审记录表 | 30d | 2023-05-30 | 2023-07-11 |  | 39d | 7/28 | 权禹铭 |
| 831 | 6.8.35 | 量产软件问题清单 | 30d | 2023-05-30 | 2023-07-11 |  | 39d | 7/28 | 权禹铭 |
| 832 | 6.8.36 | 量产软件释放审批表 | 30d | 2023-05-30 | 2023-07-11 |  | 39d | 7/28 | 权禹铭 |
| 833 | 6.8.37 | 量产软件冻结版 | 30d | 2023-05-30 | 2023-07-11 |  | 39d | 7/28 | 权禹铭 |
| 834 | 6.8.38 | 量产软件版本记录表 | 30d | 2023-05-30 | 2023-07-11 |  | 39d | 7/28 | 权禹铭 |

| ID | WBS | Task | Duration | Start | Finish | Predecessors | Total slack | Free slack | 要求补充时间 | 责任人 |
| --- | --- | --- | --- | --- | --- | --- | --- | --- | --- | --- |
| 835 | 6.9 | **总成OTS认可** | 10d | 2023-05-23 | 2023-06-06 | 778 | 64d |  | 7/28 |  |
| 836 | 6.9.1 | 总成OTS认可报告 | 10d | 2023-05-23 | 2023-06-06 |  | 64d |  | 7/28 | 骆云飞 |
| 837 | 6.10 | **量检具验收** | 5d | 2023-05-23 | 2023-05-30 | 778 | 69d |  | 7/28 |  |
| 838 | 6.10.1 | 量检具验收报告 | 5d | 2023-05-23 | 2023-05-30 |  | 69d |  | 7/28 | 聂广 |
| 839 | 6.11 | **工装设备验收** | 5d | 2023-05-23 | 2023-05-30 | 778 | 69d |  | 7/28 |  |
| 840 | 6.11.1 | 工装设备验收报告 | 5d | 2023-05-23 | 2023-05-30 |  | 69d |  | 7/28 | 毛方东 |
| 841 | 6.12 | **设备能力验收** | 10d | 2023-05-23 | 2023-06-06 | 778 | 64d |  | 7/28 |  |
| 842 | 6.12.1 | 设备预验收清单 | 5d | 2023-05-23 | 2023-05-30 |  | 69d |  | 7/28 | 毛方东 |
| 843 | 6.12.2 | 设备调试记录表 | 5d | 2023-05-23 | 2023-05-30 |  | 69d |  | 7/28 | 毛方东 |
| 844 | 6.12.3 | 设备移交申请单 | 10d | 2023-05-23 | 2023-06-06 |  | 64d |  | 7/28 | 毛方东 |
| 845 | 6.13 | **过程能力分析** | 10d | 2023-05-23 | 2023-06-06 | 778 | 64d |  | 7/28 |  |
| 846 | 6.13.1 | 过程能力分析报告 | 10d | 2023-05-23 | 2023-06-06 |  | 64d |  | 7/28 | 梁元伟 |
| 847 | 6.13.2 | MSA报告 | 10d | 2023-05-23 | 2023-06-06 |  | 64d |  | 7/28 | MQE |
| 848 | 6.14 | **工装样机/过线生产验证产品审核** | 5d | 2023-05-23 | 2023-05-30 | 778 | 23d | 0d | 7/28 |  |
| 849 | 6.14.1 | 产品审核报告 | 5d | 2023-05-23 | 2023-05-30 |  | 23d |  | 7/28 | 产品审核人员 |
| 850 | 6.15 | **现场人员培训** | 1d? | 2023-05-23 | 2023-05-24 | 778 | 73d |  | 7/28 |  |
| 851 | 6.15.1 | 人员培训记录表 | 1d? | 2023-05-23 | 2023-05-24 |  | 73d |  | 7/28 | 向永川 |
| 852 | 6.16 | **工装样机装机记录确认** | 5d | 2023-05-23 | 2023-05-30 | 778 | 69d |  | 7/28 |  |
| 853 | 6.16.1 | 随线单 | 5d | 2023-05-23 | 2023-05-30 |  | 69d |  | 7/28 | 梁元伟 |
| 854 | 6.17 | **包装方案包装验证** | 10d | 2023-05-23 | 2023-06-06 | 778 | 64d |  | 7/28 |  |
| 855 | 6.17.1 | 包装验证书 | 10d | 2023-05-23 | 2023-06-06 |  | 64d |  | 7/28 | 秦飞 |
| 856 | 6.18 | **NCC系统导入** | 5d | 2023-05-23 | 2023-05-30 | 778 | 69d |  | 7/28 |  |
| 857 | 6.18.1 | NCC系统导入计划 | 5d | 2023-05-23 | 2023-05-30 |  | 69d |  | 7/28 | 罗永江 |
| 858 | 6.19 | **OTS封样** | 15d | 2023-05-23 | 2023-06-13 | 778 | 59d |  | 7/28 |  |
| 859 | 6.19.1 | 外购件OTS封样 | 15d | 2023-05-23 | 2023-06-13 |  | 59d |  | 7/28 | 叶亚宝 |

| ID | WBS | Task | Type | Duration | Start | Finish | Predecessors | Total slack | Free slack | 要求补充时间 | 责任人 | 责任环节 |
| --- | --- | --- | --- | --- | --- | --- | --- | --- | --- | --- | --- | --- |
| 860 | 6.20 | **外购零部件100%通过PPAP批准** |  | 15d | 2023-05-30 | 2023-06-20 | 848 | 49d | 0d | 7/28 |  |  |
| 861 | 6.20.1 | PPAP |  | 10d | 2023-05-30 | 2023-06-13 |  | 49d | 0d | 7/28 | 叶亚宝 |  |
| 862 | 6.20.2 | PSW |  | 5d | 2023-06-13 | 2023-06-20 | 861 | 49d |  | 7/28 | 叶亚宝 |  |
| 863 | 6.21 | **供应商的APQP进度跟踪** |  | 15d | 2023-05-30 | 2023-06-20 | 848 | 54d |  | 7/28 |  |  |
| 864 | 6.21.1 | APQP进度核查跟踪表 |  | 15d | 2023-05-30 | 2023-06-20 |  | 54d |  | 7/28 | 叶亚宝 |  |
| 865 | 6.22 | **项目成本第四次结算** |  | 5d | 2023-06-20 | 2023-06-27 | 860 | 49d |  | 7/28 |  |  |
| 866 | 6.22.1 | 本阶段投资收益分析报告 |  | 5d | 2023-06-20 | 2023-06-27 |  | 49d |  | 7/28 | 范甄妮 |  |
| 867 | 6.23 | **确定各阶段质量目标及质量追踪** |  | 20d | 2023-05-30 | 2023-06-27 | 848 | 49d |  | 7/28 |  |  |
| 868 | 6.23.1 | 本阶段质量目标确认表 |  | 20d | 2023-05-30 | 2023-06-27 |  | 49d |  | 7/28 | 柳波 |  |
| 869 | 6.23.2 | 质量问题清单 |  | 20d | 2023-05-30 | 2023-06-27 |  | 49d |  | 7/28 | 王成林 |  |
| 870 | 6.24 | **项目变更管理** |  | 20d | 2023-05-30 | 2023-06-27 | 848 | 49d |  | 7/28 |  |  |
| 871 | 6.24.1 | 项目变更清单 |  | 20d | 2023-05-30 | 2023-06-27 |  | 49d |  | 7/28 | 李万强 |  |
| 872 | 6.25 | **项目风险识别** |  | 0d? | 2023-05-30 | 2023-05-30 | 848 | 69d |  | 7/28 |  |  |
| 873 | 6.25.1 | 项目风险清单 | inactive | 20d | 2023-05-30 | 2023-06-27 |  | 49d |  | 7/28 | 李万强 |  |
| 874 | 6.26 | **项目阀门评审** |  | 22d | 2023-05-30 | 2023-06-29 | 848 | 23d | 0d | 7/28 |  |  |
| 875 | 6.26.1 | 质量阀评审报告 |  | 22d | 2023-05-30 | 2023-06-29 |  | 23d |  | 7/28 |  |  |
| 876 | 6.27 | **项目阶段绩效评价** |  | 3d | 2023-06-29 | 2023-07-04 | 874 | 44d |  | 7/28 |  |  |
| 877 | 6.27.1 | 项目整体阶段性评价表 |  | 3d | 2023-06-29 | 2023-07-04 |  | 44d |  | 7/28 |  |  |
| 878 | 7 | **G1量产批准阶段** |  | 51d? | 2023-05-23 | 2023-08-02 |  | 0d |  |  |  |  |
| 879 | 7.1 | **阶段策划** |  | 1d? | 2023-06-29 | 2023-06-30 | 874 | 23d |  | 7/30 |  |  |
| 880 | 7.1.1 | 项目一级开发计划(更新) |  | 1d? | 2023-06-29 | 2023-06-30 |  | 23d |  | 7/30 | 李万强 | 项目管理部 |
| 881 | 7.1.2 | 项目二级开发计划 |  | 1d? | 2023-06-29 | 2023-06-30 |  | 23d |  | 7/30 | 李万强 | 项目管理部 |
| 882 | 7.1.3 | 项目三级开发计划 |  | 1d? | 2023-06-29 | 2023-06-30 |  | 23d |  | 7/30 | 各模块经理 | 项目管理部 |
| 883 | 7.1.4 | 项目小组成员名单和职责分工表 |  | 1d? | 2023-06-29 | 2023-06-30 |  | 23d |  | 7/30 | 李万强 | 项目管理部 |

| ID | WBS | Task | Duration | Start | Finish | Predecessors | Total slack | Free slack | 要求补充时间 | 责任人 | 责任环节 |
| --- | --- | --- | --- | --- | --- | --- | --- | --- | --- | --- | --- |
| 884 | 7.2 | **设计变更** | 20d | 2023-05-23 | 2023-06-20 | 778 | 18d | 0d | 7/30 |  |  |
| 885 | 7.2.1 | 设计变更清单 | 20d | 2023-05-23 | 2023-06-20 |  | 18d |  | 7/30 | DRE | 研发技术部 |
| 886 | 7.3 | **售后文件发布** | 7d | 2023-06-20 | 2023-06-29 | 884 | 24d |  | 7/30 |  |  |
| 887 | 7.3.1 | 电池包总成维修手册 | 7d | 2023-06-20 | 2023-06-29 |  | 24d |  | 7/30 | 骆云飞 | 产品部 |
| 888 | 7.3.2 | 可维修可更换易损件清单 | 7d | 2023-06-20 | 2023-06-29 |  | 24d |  | 7/30 | 陈杨 | 研发技术部 |
| 889 | 7.3.3 | 三包协议签订 | 7d | 2023-06-20 | 2023-06-29 |  | 24d |  | 7/30 | 涂慧明 | 营销部 |
| 890 | 7.3.4 | 三包索赔清单 | 7d | 2023-06-20 | 2023-06-29 |  | 24d |  | 7/30 | 涂慧明 | 营销部 |
| 891 | 7.4 | **正式版本工艺文件下发现场** | 7d | 2023-06-20 | 2023-06-29 | 884 | 18d | 0d | 7/30 |  |  |
| 892 | 7.4.1 | 生产用控制计划 | 7d | 2023-06-20 | 2023-06-29 |  | 18d |  | 7/30 | 向永川 | 制造技术部 |
| 893 | 7.4.2 | 生产用作业指导书 | 7d | 2023-06-20 | 2023-06-29 |  | 18d |  | 7/30 | 向永川 | 制造技术部 |
| 894 | 7.4.3 | 生产用检验指导书 | 7d | 2023-06-20 | 2023-06-29 |  | 18d |  | 7/30 | 柳波 | 品质部 |
| 895 | 7.4.4 | 设备作业指导书 | 7d | 2023-06-20 | 2023-06-29 |  | 18d |  | 7/30 | 向永川 | 制造技术部 |
| 896 | 7.4.5 | 返修作业指导书 | 7d | 2023-06-20 | 2023-06-29 |  | 18d |  | 7/30 | 向永川 | 制造技术部 |
| 897 | 7.4.6 | 设备、工装预防性维护保养指导书 | 7d | 2023-06-20 | 2023-06-29 |  | 18d |  | 7/30 | 设备工程师 | 制造技术部 |
| 898 | 7.4.7 | 文件下发清单及记录 | 7d | 2023-06-20 | 2023-06-29 |  | 18d |  | 7/30 | 向永川 | 制造技术部 |
| 899 | 7.5 | **过程设计变更记录发放** | 5d | 2023-06-20 | 2023-06-27 | 884 | 26d |  | 7/30 |  |  |
| 900 | 7.5.1 | 过程设计更改清单 | 5d | 2023-06-20 | 2023-06-27 |  | 26d |  | 7/30 | 梁元伟 | 新产品导入部 |
| 901 | 7.5.2 | 过程设计更改通知单 | 5d | 2023-06-20 | 2023-06-27 |  | 26d |  | 7/30 | 梁元伟 | 新产品导入部 |
| 902 | 7.6 | **现场操作人员、质检人员培训完成** | 3d | 2023-06-29 | 2023-07-04 | 891 | 18d | 0d | 7/30 |  |  |
| 903 | 7.6.1 | 上岗资格证、培训记录、考核记录 | 3d | 2023-06-29 | 2023-07-04 |  | 18d |  | 7/30 | 向永川 | 制造技术部 |
| 904 | 7.7 | **NCC系统导入** | 3d | 2023-06-29 | 2023-07-04 | 891 | 18d | 0d | 7/30 |  |  |
| 905 | 7.7.1 | NCC系统计划 | 3d | 2023-06-29 | 2023-07-04 |  | 18d |  | 7/30 | 罗永江 | 计划部 |
| 906 | 7.8 | **产品审核** | 5d | 2023-06-20 | 2023-06-27 | 778, 884 | 18d | 0d | 7/30 |  |  |
| 907 | 7.8.1 | 产品审核报告 | 5d | 2023-06-20 | 2023-06-27 |  | 18d |  | 7/30 | 产品审核员 | 品质部 |

| ID | WBS | Task | Duration | Start | Finish | Predecessors | Total slack | Free slack | Constraint | 要求补充时间 | 责任人 | 责任环节 |
| --- | --- | --- | --- | --- | --- | --- | --- | --- | --- | --- | --- | --- |
| 908 | 7.9 | **设备终验收** | 5d | 2023-06-27 | 2023-07-04 | 906 | 18d | 0d |  | 7/30 |  |  |
| 909 | 7.9.1 | 设备终验收报告 | 5d | 2023-06-27 | 2023-07-04 |  | 18d |  |  | 7/30 | 设备工程师 | 制造技术部 |
| 910 | 7.10 | **早期遏制开始** | 3d | 2023-07-04 | 2023-07-07 | 902, 904, 906, 908 | 18d |  |  | 7/30 |  |  |
| 911 | 7.10.1 | 新产品早期遏制计划 | 3d | 2023-07-04 | 2023-07-07 |  | 18d |  |  | 7/30 | 柳波 制造代表 | 品质部/制造部 |
| 912 | 7.11 | **生产中暴露的零部件一致性问题整改完成** | 15d | 2023-05-23 | 2023-06-13 | 778 | 28d | 0d |  | 7/30 |  |  |
| 913 | 7.11.1 | 问题清单 | 15d | 2023-05-23 | 2023-06-13 |  | 28d |  |  | 7/30 | 叶亚宝 | 品质部 |
| 914 | 7.12 | **供应商100％通过1PP/2PP** | 5d | 2023-06-13 | 2023-06-20 | 912 | 28d | 0d |  | 7/30 |  |  |
| 915 | 7.12.1 | 过程审核报告 | 5d | 2023-06-13 | 2023-06-20 |  | 28d |  |  | 7/30 | 叶亚宝 | 品质部 |
| 916 | 7.13 | **零部件早期遏制开始** | 3d | 2023-06-20 | 2023-06-23 | 914 | 28d |  |  | 7/30 |  |  |
| 917 | 7.13.1 | 早期遏制供应商清单 | 3d | 2023-06-20 | 2023-06-23 |  | 28d |  |  | 7/30 | 叶亚宝 | 品质部 |
| 918 | 7.13.2 | 启动早期遏制通知单 | 3d | 2023-06-20 | 2023-06-23 |  | 28d |  |  | 7/30 | 叶亚宝 | 品质部 |
| 919 | 7.14 | **PP生产通过** | 3d | 2023-07-13 | 2023-07-18 | 927FS-10d | 11d |  |  | 7/30 |  |  |
| 920 | 7.14.1 | PP审核报告 | 3d | 2023-07-13 | 2023-07-18 |  | 11d |  |  | 7/30 | 王成林 | 品质部 |
| 921 | 7.14.2 | 总成全尺寸检测 | 3d | 2023-07-13 | 2023-07-18 |  | 11d |  |  | 7/30 | 王成林 | 品质部 |
| 922 | 7.14.3 | MSA报告-质量 | 3d | 2023-07-13 | 2023-07-18 |  | 11d |  |  | 7/30 | 王成林 | 品质部 |
| 923 | 7.14.4 | SPC报告 | 3d | 2023-07-13 | 2023-07-18 |  | 11d |  |  | 7/30 | 王成林 | 品质部 |
| 924 | 7.14.5 | 节拍验证表 | 3d | 2023-07-13 | 2023-07-18 |  | 11d |  |  | 7/30 | 隆尧 | 精益生产部 |
| 925 | 7.14.6 | 线平衡 | 3d | 2023-07-13 | 2023-07-18 |  | 11d |  |  | 7/30 | 隆尧 | 精益生产部 |
| 926 | 7.14.7 | 工位人员排布表 | 3d | 2023-07-13 | 2023-07-18 |  | 11d |  |  | 7/30 | 隆尧 | 精益生产部 |
| 927 | 7.15 | **总成PPAP批准** | 6d? | 2023-07-19 | 2023-07-27 |  | 4d | 0d |  | 7/30 |  |  |
| 928 | 7.15.1 | PPAP报告 | 1d? | 2023-07-19 | 2023-07-20 |  | 4d | 0d | start no earlier than 2023-07-19 | 7/30 | 王成林 | 品质部 |
| 929 | 7.15.2 | PSW | 5d | 2023-07-20 | 2023-07-27 | 928 | 4d |  |  | 7/30 | 王成林 | 品质部 |
| 930 | 7.16 | **项目成本第五次结算** | 1d? | 2023-07-25 | 2023-07-26 | 939FS-5d | 5d |  |  | 7/30 |  |  |
| 931 | 7.16.1 | 本阶段投资收益分析报告 | 1d? | 2023-07-25 | 2023-07-26 |  | 5d |  |  | 7/30 | 范甄妮 | 财会部 |

| ID | WBS | Task | Duration | Start | Finish | Predecessors | Total slack | Constraint | 要求补充时间 | 责任人 | 责任环节 |
| --- | --- | --- | --- | --- | --- | --- | --- | --- | --- | --- | --- |
| 932 | 7.17 | **确定各阶段质量目标及质量追踪** | 1d? | 2023-07-25 | 2023-07-26 | 939FS-5d | 5d |  | 7/30 |  |  |
| 933 | 7.17.1 | 本阶段质量目标确认表 | 1d? | 2023-07-25 | 2023-07-26 |  | 5d |  | 7/30 | 柳波 | 品质部 |
| 934 | 7.17.2 | 质量问题清单 | 1d? | 2023-07-25 | 2023-07-26 |  | 5d |  | 7/30 | 王成林 | 品质部 |
| 935 | 7.18 | **项目变更管理** | 1d? | 2023-07-25 | 2023-07-26 | 939FS-5d | 5d |  | 7/30 |  |  |
| 936 | 7.18.1 | 项目变更清单 | 1d? | 2023-07-25 | 2023-07-26 |  | 5d |  | 7/30 | 李万强 | 项目管理部 |
| 937 | 7.19 | **项目风险识别** | 1d? | 2023-07-25 | 2023-07-26 | 939FS-5d | 5d |  | 7/30 |  |  |
| 938 | 7.19.1 | 项目风险清单 | 1d? | 2023-07-25 | 2023-07-26 |  | 5d |  | 7/30 | 李万强 | 项目管理部 |
| 939 | 7.20 | **项目阀门评审** | 1d? | 2023-07-31 | 2023-08-01 |  | 0d |  | 7/30 |  |  |
| 940 | 7.20.1 | 质量阀评审报告 | 1d? | 2023-07-31 | 2023-08-01 |  | 0d | start no earlier than 2023-07-31 | 7/30 | 李万强 | 项目管理部 |
| 941 | 7.21 | **项目阶段绩效评价** | 1d? | 2023-08-01 | 2023-08-02 | 939 | 0d |  | 7/30 |  |  |
| 942 | 7.21.1 | 项目整体阶段性评价表 | 1d? | 2023-08-01 | 2023-08-02 |  | 0d |  | 7/30 | 李万强 | 项目管理部 |
| 943 | 8 | **G0项目移交阶段** | 23d | 2023-08-02 | 2023-09-04 | 878 | 0d |  |  |  |  |
| 944 | 8.1 | **项目经验总结** | 20d | 2023-08-02 | 2023-08-30 |  | 3d |  |  |  |  |
| 945 | 8.1.1 | 项目管理经验总结报告 | 20d | 2023-08-02 | 2023-08-30 |  | 3d |  |  | 李万强 | 项目管理部 |
| 946 | 8.2 | **开发经验总结** | 20d | 2023-08-02 | 2023-08-30 |  | 3d |  |  |  |  |
| 947 | 8.2.1 | 开发经验总结报告 | 20d | 2023-08-02 | 2023-08-30 |  | 3d |  |  | DRE | 研发技术部/产品部 |
| 948 | 8.3 | **软件记录** | 20d | 2023-08-02 | 2023-08-30 |  | 3d |  |  |  |  |
| 949 | 8.3.1 | 量产软件使用说明书 | 20d | 2023-08-02 | 2023-08-30 |  | 3d |  |  | 权禹铭 | BMS开发部 |
| 950 | 8.3.2 | 量产软件版本记录表 | 20d | 2023-08-02 | 2023-08-30 |  | 3d |  |  | 权禹铭 | BMS开发部 |
| 951 | 8.4 | **设计变更** | 20d | 2023-08-02 | 2023-08-30 |  | 3d |  |  |  |  |
| 952 | 8.4.1 | 设计变更申请 | 20d | 2023-08-02 | 2023-08-30 |  | 3d |  |  | DRE | 研发技术部/产品部 |
| 953 | 8.5 | **过程能力确认** | 20d | 2023-08-02 | 2023-08-30 |  | 3d |  |  |  |  |
| 954 | 8.5.1 | 初始过程能力调查报告 | 20d | 2023-08-02 | 2023-08-30 |  | 3d |  |  | 向永川 | 制造技术部 |
| 955 | 8.6 | **过程设计经验总结** | 20d | 2023-08-02 | 2023-08-30 |  | 3d |  |  |  |  |
| 956 | 8.6.1 | 过程设计及生产准备总结报告 | 20d | 2023-08-02 | 2023-08-30 |  | 3d |  |  | 梁元伟 | 新产品导入部 |

| ID | WBS | Task | Duration | Start | Finish | Total slack | 责任人 | 责任环节 |
| --- | --- | --- | --- | --- | --- | --- | --- | --- |
| 957 | 8.7 | **生产过程总结** | 20d | 2023-08-02 | 2023-08-30 | 3d |  |  |
| 958 | 8.7.1 | 生产管理经验总结报告 | 20d | 2023-08-02 | 2023-08-30 | 3d | 边春洋 | 生产部 |
| 959 | 8.8 | **产品审核正常开展** | 20d | 2023-08-02 | 2023-08-30 | 3d |  |  |
| 960 | 8.8.1 | 新产品早期遏制退出申请单 | 20d | 2023-08-02 | 2023-08-30 | 3d | 边春洋 | 生产部 |
| 961 | 8.8.2 | GP12检测报告 | 20d | 2023-08-02 | 2023-08-30 | 3d | 柳波 | 品质部 |
| 962 | 8.9 | **供应商PPAP** | 20d | 2023-08-02 | 2023-08-30 | 3d |  |  |
| 963 | 8.9.1 | 产品审核报告 | 20d | 2023-08-02 | 2023-08-30 | 3d | 产品审核员 | 品质部 |
| 964 | 8.10 | **供应商PPAP** | 20d | 2023-08-02 | 2023-08-30 | 3d |  |  |
| 965 | 8.10.1 | 供应商PPAP审核报告 | 20d | 2023-08-02 | 2023-08-30 | 3d | 叶亚宝 | 品质部 |
| 966 | 8.11 | **供应商开发经验总结** | 20d | 2023-08-02 | 2023-08-30 | 3d |  |  |
| 967 | 8.11.1 | 供应商质量管理经验总结报告 | 20d | 2023-08-02 | 2023-08-30 | 3d | 王成林/ 周密 | 品质部/ 采购部 |
| 968 | 8.12 | **外购/外协零部件早期生产遏制的退出** | 20d | 2023-08-02 | 2023-08-30 | 3d |  |  |
| 969 | 8.12.1 | 零部件GP12检测报告（如有） | 20d | 2023-08-02 | 2023-08-30 | 3d | 叶亚宝 | 品质部 |
| 970 | 8.12.2 | 新产品早期遏制退出申请单 | 20d | 2023-08-02 | 2023-08-30 | 3d | 叶亚宝 | 品质部 |
| 971 | 8.13 | **成本总结** | 20d | 2023-08-02 | 2023-08-30 | 3d |  |  |
| 972 | 8.13.1 | 财务经验总结报告 | 20d | 2023-08-02 | 2023-08-30 | 3d | 范甄妮 | 财会部 |
| 973 | 8.14 | **质量策划** | 20d | 2023-08-02 | 2023-08-30 | 3d |  |  |
| 974 | 8.14.1 | 试验计划表 | 20d | 2023-08-02 | 2023-08-30 | 3d | 柳波 | 品质部 |
| 975 | 8.15 | **质量总结** | 20d | 2023-08-02 | 2023-08-30 | 3d |  |  |
| 976 | 8.15.1 | 本阶段质量目标确认表 | 20d | 2023-08-02 | 2023-08-30 | 3d | 柳波 | 品质部 |
| 977 | 8.15.2 | 质量问题清单 | 20d | 2023-08-02 | 2023-08-30 | 3d | 王成林 | 品质部 |
| 978 | 8.15.3 | 质量管理经验总结报告 | 20d | 2023-08-02 | 2023-08-30 | 3d | 柳波 | 品质部 |
| 979 | 8.16 | **项目阀门评审** | 20d | 2023-08-02 | 2023-08-30 | 3d |  |  |
| 980 | 8.16.1 | 质量阀评审报告 | 20d | 2023-08-02 | 2023-08-30 | 3d | 李万强 | 项目管理部 |

| ID | WBS | Task | Duration | Start | Finish | Predecessors | Total slack | 责任人 | 责任环节 |
| --- | --- | --- | --- | --- | --- | --- | --- | --- | --- |
| 981 | 8.17 | **项目结项评审** | 20d | 2023-08-02 | 2023-08-30 |  | 0d |  |  |
| 982 | 8.17.1 | 结项报告 | 20d | 2023-08-02 | 2023-08-30 |  | 0d | 李万强 | 项目管理部 |
| 983 | 8.18 | **项目阶段绩效评价** | 3d | 2023-08-30 | 2023-09-04 | 981 | 0d |  |  |
| 984 | 8.18.1 | 项目整体阶段性评价表 | 3d | 2023-08-30 | 2023-09-04 |  | 0d | 李万强 | 项目管理部 |
